Schedule from MS Project, 2023-10-23 to 2024-11-21, costs in $.

## Calendars

- Standard: Mon-Fri 08:00-12:00, 13:00-17:00; Sat-Sun off.

## Resources

| Resource | Rate |
| --- | --- |
| Database Administrator | 34 |
| Senior Developer | 68 |
| Front End Developer | 57 |
| Back End Developer | 58 |
| QA Tester 1 | 25 |
| IT Manager | 68 |
| Project Manager | 68 |
| Sales Manager | 63 |
| QA Tester 2 | 25 |
| Junior Developer | 37 |

## Schedule

| ID | WBS | Task | Type | Duration | Start | Finish | Predecessors | Total slack | Resources | Work | Cost |
| --- | --- | --- | --- | --- | --- | --- | --- | --- | --- | --- | --- |
| 1 | 1 | **Pre-Development Activities** |  | 30.5d | 2023-10-23 | 2023-12-04 |  | 0d |  | 1048h | 62,400 |
| 2 | 1.1 | Perform Business Analysis |  | 14d | 2023-10-23 | 2023-11-09 |  | 0d | Sales Manager | 112h | 7,056 |
| 3 | 1.2 | Investigate Requirements |  | 14d | 2023-10-23 | 2023-11-09 |  | 0d | Project Manager; IT Manager; Senior Developer | 336h | 22,848 |
| 4 | 1.3 | **Perform Feasibility Study** |  | 3d | 2023-11-10 | 2023-11-14 |  | 0d |  | 24h | 1,632 |
| 5 | 1.3.1 | Confirm System Configuration Requirements |  | 3d | 2023-11-10 | 2023-11-14 | 3, 2 | 0d | Project Manager | 24h | 1,632 |
| 6 | 1.4 | **Project Planning** |  | 5d | 2023-11-15 | 2023-11-21 |  | 0d |  | 160h | 9,240 |
| 7 | 1.4.1 | Review System Requirements |  | 1d | 2023-11-15 | 2023-11-15 | 5 | 0d | Senior Developer; Junior Developer; Back End Developer; Project Manager | 32h | 1,848 |
| 8 | 1.4.2 | Review requirements |  | 4d | 2023-11-16 | 2023-11-21 | 7 | 0d | Senior Developer; Junior Developer; Back End Developer; Project Manager | 128h | 7,392 |
| 9 | 1.5 | **Install and Configure Development Environment** |  | 5d | 2023-11-22 | 2023-11-28 |  | 0d |  | 248h | 12,944 |
| 10 | 1.5.1 | Install Microsoft Windows 11 Operating System |  | 1d | 2023-11-22 | 2023-11-22 | 8 | 0d | Project Manager; IT Manager; Senior Developer; Back End Developer; Front End Developer; Database Administrator; QA Tester 1 | 56h | 3,024 |
| 11 | 1.5.2 | Install and configure PostgreSQL |  | 2d | 2023-11-23 | 2023-11-24 | 10 | 0d | IT Manager; Senior Developer; Back End Developer; Front End Developer; Database Administrator; QA Tester 1 | 96h | 4,960 |
| 12 | 1.5.3 | Install and configure SQL Interface |  | 2d | 2023-11-27 | 2023-11-28 | 11 | 0d | IT Manager; Senior Developer; Back End Developer; Front End Developer; Database Administrator; QA Tester 1 | 96h | 4,960 |
| 13 | 1.6 | **Install and Configure IDEs** |  | 2.5d | 2023-11-29 | 2023-12-01 |  | 0d |  | 120h | 6,200 |
| 14 | 1.6.1 | Install Visual Studio Code IDE |  | 0.5d | 2023-11-29 | 2023-11-29 | 12 | 0d | IT Manager; Senior Developer; Back End Developer; Front End Developer; Database Administrator; QA Tester 1 | 24h | 1,240 |
| 15 | 1.6.2 | Configure VS Code for Java, Javascript, HTML, CSS, and PostgreSQL dependencies |  | 2d | 2023-11-29 | 2023-12-01 | 14 | 0d | Back End Developer; Database Administrator; Front End Developer; IT Manager; QA Tester 1; Senior Developer | 96h | 4,960 |
| 16 | 1.7 | **Install and Configure Testing Suite** |  | 1d | 2023-12-01 | 2023-12-04 |  | 0d |  | 48h | 2,480 |
| 17 | 1.7.1 | Install and configure Maven |  | 1d | 2023-12-01 | 2023-12-04 | 15 | 0d | Front End Developer; QA Tester 1; Senior Developer | 24h | 1,200 |
| 18 | 1.7.2 | Install and configure Junit |  | 1d | 2023-12-01 | 2023-12-04 | 17SS | 0d | Back End Developer; Database Administrator; IT Manager | 24h | 1,280 |
| 19 | 1.7.3 | Maven/Junit install complete | milestone | 0d | 2023-12-04 | 2023-12-04 | 17, 18 | 253.4d |  |  |  |
| 20 | 2 | **Phase 1: Basic Inventory, Procurement, Supplier, Distributor and Customer Management** |  | 76.3d | 2023-12-04 | 2024-03-19 |  | 0d |  | 1632h | 87,803.2 |
| 21 | 2.1 | Development team kickoff meeting |  | 1d | 2023-12-04 | 2023-12-05 | 18 | 0d | Back End Developer; Front End Developer; Senior Developer; Project Manager | 32h | 2,008 |
| 22 | 2.2 | **Develop Core Database Capabilities** |  | 4d | 2023-12-05 | 2023-12-11 |  | 0d |  | 112h | 5,776 |
| 23 | 2.2.1 | **DBMS: Install and configure database management system** |  | 4d | 2023-12-05 | 2023-12-11 |  | 0d |  | 64h | 2,848 |
| 24 | 2.2.1.1 | Test DBMS and SQL |  | 0.5d | 2023-12-05 | 2023-12-05 | 21 | 0d | Database Administrator | 4h | 136 |

| ID | WBS | Task | Type | Duration | Start | Finish | Predecessors | Total slack | Free slack | Resources | Work | Cost |
| --- | --- | --- | --- | --- | --- | --- | --- | --- | --- | --- | --- | --- |
| 25 | 2.2.1.2 | **Create Inventory DB** |  | 1.5d | 2023-12-06 | 2023-12-07 |  | 0d |  |  | 12h | 408 |
| 26 | 2.2.1.2.1 | Create database |  | 0.5d | 2023-12-06 | 2023-12-06 | 24 | 0d |  | Database Administrator | 4h | 136 |
| 27 | 2.2.1.2.2 | Create tables |  | 1d | 2023-12-06 | 2023-12-07 | 26 | 0d |  | Database Administrator | 8h | 272 |
| 28 | 2.2.1.3 | **Fill tables with dummy data** |  | 1d | 2023-12-07 | 2023-12-08 |  | 0d |  |  | 40h | 2,032 |
| 29 | 2.2.1.3.1 | Fill Fill Inventory table with dummy data |  | 1d | 2023-12-07 | 2023-12-08 | 27 | 0d |  | Database Administrator | 8h | 272 |
| 30 | 2.2.1.3.2 | Fill Customer table with dummy data |  | 1d | 2023-12-07 | 2023-12-08 | 29SS | 0d |  | Front End Developer | 8h | 456 |
| 31 | 2.2.1.3.3 | Fill Distributor table with dummy data |  | 1d | 2023-12-07 | 2023-12-08 | 30SS | 0d |  | Back End Developer | 8h | 464 |
| 32 | 2.2.1.3.4 | Fill Medical Supplier table with dummy data |  | 1d | 2023-12-07 | 2023-12-08 | 31SS | 0d |  | Junior Developer | 8h | 296 |
| 33 | 2.2.1.3.5 | Fill Medical Supplies table with dummy data |  | 1d | 2023-12-07 | 2023-12-08 | 32SS | 0d |  | Senior Developer | 8h | 544 |
| 34 | 2.2.1.3.6 | Filling tables with dummy data complete | milestone | 0d | 2023-12-08 | 2023-12-08 | 29, 30, 31, 32, 33 | 0d |  |  |  |  |
| 35 | 2.2.1.4 | Write SQL script to designate primary and foreign keys of each table in the database |  | 1d | 2023-12-08 | 2023-12-11 | 34 | 0d |  | Database Administrator | 8h | 272 |
| 36 | 2.2.2 | **Mock Up User Interfaces** |  | 2d | 2023-12-05 | 2023-12-07 |  | 250.4d |  |  | 48h | 2,928 |
| 37 | 2.2.2.1 | Mock up user interface for Medisail customers |  | 1d | 2023-12-05 | 2023-12-06 | 21 | 250.4d | 0d | Front End Developer | 8h | 456 |
| 38 | 2.2.2.2 | Mock up user interface for suppliers |  | 1d | 2023-12-05 | 2023-12-06 | 37SS | 250.4d | 0d | Back End Developer | 8h | 464 |
| 39 | 2.2.2.3 | Mock up user interface for Medisail non-technical employees |  | 1d | 2023-12-05 | 2023-12-06 | 38SS | 250.4d | 0d | Senior Developer | 8h | 544 |
| 40 | 2.2.2.4 | Mock up marketplace user interface |  | 1d | 2023-12-06 | 2023-12-07 | 39 | 250.4d | 0d | Front End Developer | 8h | 456 |
| 41 | 2.2.2.5 | Mock up shopping cart and checkout interfaces |  | 1d | 2023-12-06 | 2023-12-07 | 40SS | 250.4d | 0d | Back End Developer | 8h | 464 |
| 42 | 2.2.2.6 | Mock up login portal user interface |  | 1d | 2023-12-06 | 2023-12-07 | 41SS | 250.4d |  | Senior Developer | 8h | 544 |
| 43 | 2.3 | **Unit testing** |  | 13.5d | 2023-12-11 | 2023-12-28 |  | 0d |  |  | 305.6h | 14,232 |
| 44 | 2.3.1 | **Write tests** |  | 3.5d | 2023-12-11 | 2023-12-14 |  | 0d |  |  | 105.6h | 4,568 |
| 45 | 2.5.1 | Write unit tests for server |  | 1d | 2023-12-11 | 2023-12-12 | 35 | 0d |  | QA Tester 1 | 8h | 200 |
| 46 | 2.3.1.2 | Write unit tests for Medisail API interface |  | 1d | 2023-12-11 | 2023-12-12 | 45SS | 0d |  | QA Tester 2 | 8h | 200 |
| 47 | 2.3.1.3 | Write unit tests for user API interface |  | 1d | 2023-12-11 | 2023-12-12 | 46SS | 0d |  | Front End Developer | 8h | 456 |
| 48 | 2.3.1.4 | Write tests for customer user interface |  | 1d | 2023-12-12 | 2023-12-13 | 47 | 0d |  | QA Tester 1 | 8h | 200 |
| 49 | 2.3.1.5 | Write tests for supplier user interface |  | 1d | 2023-12-12 | 2023-12-13 | 48SS | 0d |  | QA Tester 2 | 8h | 200 |
| 50 | 2.3.1.6 | Write tests for Medisail user interface |  | 1d | 2023-12-12 | 2023-12-13 | 49SS | 0d |  | Front End Developer | 8h | 456 |
| 51 | 2.3.1.7 | Write tests for user login interface |  | 1.2d | 2023-12-13 | 2023-12-14 | 50 | 0d |  | QA Tester 1 | 9.6h | 240 |
| 52 | 2.3.1.8 | Write tests for shopping cart interface |  | 1.5d | 2023-12-13 | 2023-12-14 | 51SS | 0d |  | QA Tester 2 | 12h | 300 |
| 53 | 2.3.1.9 | Write tests for checkout interface |  | 1.5d | 2023-12-13 | 2023-12-14 | 52SS | 0d |  | Front End Developer | 12h | 684 |
| 54 | 2.3.1.10 | Write tests for marketplace interface |  | 3d | 2023-12-11 | 2023-12-14 | 47SS | 0.5d |  | Senior Developer | 24h | 1,632 |
| 55 | 2.3.1.11 | Write unit/interface tests complete | milestone | 0d | 2023-12-14 | 2023-12-14 | 45, 46, 47, 48, 49, 50, 51, 54, 53 | 0d |  |  |  |  |

| ID | WBS | Task | Type | Duration | Start | Finish | Predecessors | Total slack | Resources | Work | Cost |
| --- | --- | --- | --- | --- | --- | --- | --- | --- | --- | --- | --- |
| 56 | 2.3.2 | **Conduct tests** |  | 2d | 2023-12-15 | 2023-12-18 |  | 0d |  | 32h | 800 |
| 57 | 2.3.2.1 | Conduct back end unit tests |  | 2d | 2023-12-15 | 2023-12-18 | 55 | 0d | QA Tester 1 | 16h | 400 |
| 58 | 2.3.2.2 | Conduct user interface tests |  | 2d | 2023-12-15 | 2023-12-18 | 57SS | 0d | QA Tester 2 | 16h | 400 |
| 59 | 2.3.2.3 | Conduct tests complete | milestone | 0d | 2023-12-18 | 2023-12-18 | 58, 57 | 0d |  |  |  |
| 60 | 2.3.3 | Communicate results of unit tests with development team |  | 1d | 2023-12-19 | 2023-12-19 | 59 | 0d | QA Tester 1; Senior Developer | 16h | 744 |
| 61 | 2.3.4 | Modify system based on test results (if needed) |  | 5d | 2023-12-20 | 2023-12-26 | 60 | 0d | Back End Developer; Front End Developer; Senior Developer | 120h | 7,320 |
| 62 | 2.3.5 | **Retesting** |  | 2d | 2023-12-27 | 2023-12-28 |  | 0d |  | 32h | 800 |
| 63 | 2.3.5.1 | Retest user interfaces |  | 2d | 2023-12-27 | 2023-12-28 | 61 | 0d | QA Tester 1 | 16h | 400 |
| 64 | 2.3.5.2 | Retest back end |  | 2d | 2023-12-27 | 2023-12-28 | 63SS | 0d | QA Tester 2 | 16h | 400 |
| 65 | 2.3.5.3 | Retesting complete | milestone | 0d | 2023-12-28 | 2023-12-28 | 64, 63 | 0d |  |  |  |
| 66 | 2.6 | **Integration testing** |  | 17d | 2023-12-29 | 2024-01-22 |  | 0d |  | 400h | 19,416 |
| 67 | 2.4.1 | **Write integration tests** |  | 2d | 2023-12-29 | 2024-01-01 |  | 0d |  | 48h | 1,344 |
| 68 | 2.4.1.1 | Write integration tests: user interface / server |  | 2d | 2023-12-29 | 2024-01-01 | 65 | 0d | QA Tester 1 | 16h | 400 |
| 69 | 2.4.1.2 | Write integration tests: server / database |  | 2d | 2023-12-29 | 2024-01-01 | 68SS | 0d | Database Administrator | 16h | 544 |
| 70 | 2.4.1.3 | Write mocked integration tests: user interface / database |  | 2d | 2023-12-29 | 2024-01-01 | 69SS | 0d | QA Tester 2 | 16h | 400 |
| 71 | 2.4.1.4 | Write integration tests complete | milestone | 0d | 2024-01-01 | 2024-01-01 | 70, 69, 68 | 0d |  |  |  |
| 72 | 2.4.2 | **Conduct integration tests** |  | 2d | 2024-01-02 | 2024-01-03 |  | 0d |  | 48h | 1,344 |
| 73 | 2.4.2.1 | Conduct integration tests: user interfaces / server |  | 2d | 2024-01-02 | 2024-01-03 | 71 | 0d | QA Tester 1 | 16h | 400 |
| 74 | 2.4.2.2 | Conduct integration tests: server / database |  | 2d | 2024-01-02 | 2024-01-03 | 73SS | 0d | Database Administrator | 16h | 544 |
| 75 | 2.4.2.3 | Conduct integration tests: user interfaces / database |  | 2d | 2024-01-02 | 2024-01-03 | 74SS | 0d | QA Tester 2 | 16h | 400 |
| 76 | 2.4.2.4 | Conduct integration test complete | milestone | 0d | 2024-01-03 | 2024-01-03 | 75, 74, 73 | 0d |  |  |  |
| 77 | 2.4.3 | Communicate results of integration tests with development team |  | 1d | 2024-01-04 | 2024-01-04 | 76 | 0d | QA Tester 1; Senior Developer | 16h | 744 |
| 78 | 2.4.4 | Modify system based on test results (if needed) |  | 10d | 2024-01-05 | 2024-01-18 | 77 | 0d | Front End Developer; Back End Developer; Senior Developer | 240h | 14,640 |
| 79 | 2.4.5 | **Retesting integration** |  | 2d | 2024-01-19 | 2024-01-22 |  | 0d |  | 48h | 1,344 |
| 80 | 2.4.5.1 | Retest integration: user interface / server |  | 2d | 2024-01-19 | 2024-01-22 | 78 | 0d | QA Tester 1 | 16h | 400 |
| 81 | 2.4.5.2 | Retest integration: server / database |  | 2d | 2024-01-19 | 2024-01-22 | 80SS | 0d | Database Administrator | 16h | 544 |
| 82 | 2.4.5.3 | Retest integration: user interface / database |  | 2d | 2024-01-19 | 2024-01-22 | 81SS | 0d | QA Tester 2 | 16h | 400 |
| 83 | 2.4.5.4 | Retesting integration complete | milestone | 0d | 2024-01-22 | 2024-01-22 | 82, 81, 80 | 0d |  |  |  |

| ID | WBS | Task | Duration | Start | Finish | Predecessors | Total slack | Free slack | Resources | Work | Cost |
| --- | --- | --- | --- | --- | --- | --- | --- | --- | --- | --- | --- |
| 84 | 2.5 | **System testing** | 21d | 2024-01-23 | 2024-02-20 |  | 0d |  |  | 456h | 25,544 |
| 85 | 2.5.1 | Write system tests of the entire core system | 3d | 2024-01-23 | 2024-01-25 | 83 | 0d |  | QA Tester 1 | 24h | 600 |
| 86 | 2.5.2 | Conduct system tests of the core system | 5d | 2024-01-26 | 2024-02-01 | 85 | 0d |  | QA Tester 1; Senior Developer; Project Manager | 120h | 6,440 |
| 87 | 2.5.3 | Communicate results of system tests with development teams | 1d | 2024-02-02 | 2024-02-02 | 86 | 0d |  | QA Tester 1; Senior Developer; Project Manager | 24h | 1,288 |
| 88 | 2.5.4 | Modify system based on test results | 10d | 2024-02-05 | 2024-02-16 | 87 | 0d |  | Front End Developer; Back End Developer; Senior Developer | 240h | 14,640 |
| 89 | 2.5.5 | Reconduct system tests | 2d | 2024-02-19 | 2024-02-20 | 88 | 0d |  | QA Tester 1; Senior Developer; Project Manager | 48h | 2,576 |
| 90 | 2.6 | Write documentation for core system | 2d | 2024-02-21 | 2024-02-22 | 89 | 0d |  | Project Manager; Senior Developer; Sales Manager | 48h | 3,184 |
| 91 | 2.7 | **Deploy release 1** | 31.8d | 2024-02-05 | 2024-03-19 |  | 14d |  |  | 278.4h | 17,643.2 |
| 92 | 2.7.1 | **Conduct required trainings** | 5d | 2024-02-23 | 2024-02-29 |  | 0d |  |  | 112h | 6,920 |
| 93 | 2.7.1.1 | Train sales manager on core e-procurement system | 5d | 2024-02-23 | 2024-02-29 | 90 | 0d |  | Project Manager; Sales Manager | 80h | 5,240 |
| 94 | 2.7.1.2 | Train Medisail non-technical employees on core e-procurement system | 2d | 2024-02-23 | 2024-02-26 | 93SS | 0d |  | Senior Developer; Junior Developer | 32h | 1,680 |
| 95 | 2.7.2 | **Pre-Deployment marketing** | 5d | 2024-02-05 | 2024-02-09 |  | 203.9d |  |  | 40h | 2,520 |
| 96 | 2.7.2.1 | Create advertisement materials for core product | 2d | 2024-02-05 | 2024-02-06 | 88SS | 203.9d | 0d | Sales Manager | 16h | 1,008 |
| 97 | 2.7.2.2 | Identify pilot customers | 3d | 2024-02-07 | 2024-02-09 | 96 | 203.9d |  | Sales Manager | 24h | 1,512 |
| 98 | 2.7.3 | **Product deployment** | 6d | 2024-02-27 | 2024-03-05 |  | 0d |  |  | 48h | 3,264 |
| 99 | 2.7.3.1 | Deploy core system | 1d | 2024-02-27 | 2024-02-27 | 94 | 0d |  | Senior Developer | 8h | 544 |
| 100 | 2.7.3.2 | Monitor system performance after deployment | 5d | 2024-02-28 | 2024-03-05 | 99 | 0d |  | Senior Developer | 40h | 2,720 |
| 101 | 2.7.4 | **Collect customer feedabck** | 9.8d | 2024-03-06 | 2024-03-19 |  | 0d |  |  | 78.4h | 4,939.2 |
| 102 | 2.7.4.1 | Create customer survey | 0.4d | 2024-03-06 | 2024-03-06 | 100 | 0d |  | Sales Manager | 3.2h | 201.6 |
| 103 | 2.7.4.2 | Send customer survey to pilot customers, wait for, and file responses | 7d | 2024-03-06 | 2024-03-15 | 102 | 0d |  | Sales Manager | 56h | 3,528 |
| 104 | 2.7.4.3 | Collect and analyze customer feedback | 2d | 2024-03-15 | 2024-03-19 | 103 | 177.1d | 0d | Sales Manager | 16h | 1,008 |
| 105 | 2.7.4.4 | Share customer feedback with team | 0.4d | 2024-03-19 | 2024-03-19 | 104 | 177.1d |  | Sales Manager | 3.2h | 201.6 |
| 106 | 3 | **Phase 2: Integrated System Release** | 84d | 2024-03-06 | 2024-07-02 |  | 0d |  |  | 1500h | 78,732 |
| 107 | 3.1 | **Adjust Plan Based on Customer Feedback** | 1d | 2024-03-06 | 2024-03-07 |  | 0d |  |  | 16h | 1,088 |
| 108 | 3.1.1 | Revise Release 2 requirements based on feedback assessment | 1d | 2024-03-06 | 2024-03-07 | 103SS | 0d |  | Project Manager; Senior Developer | 16h | 1,088 |

| ID | WBS | Task | Type | Duration | Start | Finish | Predecessors | Total slack | Free slack | Resources | Work | Cost |
| --- | --- | --- | --- | --- | --- | --- | --- | --- | --- | --- | --- | --- |
| 109 | 3.2 | **Modify Database Functionality** |  | 5d | 2024-03-07 | 2024-03-14 |  | 0d |  |  | 48h | 2,400 |
| 110 | 3.2.1 | **Make Static Tables Dynamic** |  | 3d | 2024-03-07 | 2024-03-12 |  | 0d |  |  | 24h | 1,392 |
| 111 | 3.2.1.1 | Update endpoints in server to allow for database updates |  | 2d | 2024-03-07 | 2024-03-11 | 108 | 0d |  | Back End Developer | 16h | 928 |
| 112 | 3.2.1.2 | Test mock updates in database |  | 1d | 2024-03-11 | 2024-03-12 | 111 | 0d |  | Back End Developer | 8h | 464 |
| 113 | 3.2.2 | **Create/Fill Statistics Tables** |  | 1d | 2024-03-12 | 2024-03-13 |  | 0d |  |  | 16h | 736 |
| 114 | 3.2.2.1 | Fill Customer Statistics table with data in fields: Customer ID (Integer), Customer Name (String), Subscription Tier (Integer), Orders per Month (Integer), Average Order Total (float), Monthly Average Order Total (float), Most Purchased Product (String) |  | 1d | 2024-03-12 | 2024-03-13 | 112 | 0d |  | Database Administrator | 8h | 272 |
| 115 | 3.2.2.2 | Fill Supplier Statistics table with data in fields: Supplier ID (Integer), Supplier Name (String), Products Purchased per Month (Integer), Most Purchased Product (String), Average Sales per Month (Integer) |  | 1d | 2024-03-12 | 2024-03-13 | 114SS | 0d |  | Back End Developer | 8h | 464 |
| 116 | 3.2.2.3 | Fill statistics tables with fields complete | milestone | 0d | 2024-03-13 | 2024-03-13 | 114, 115 | 0d |  |  |  |  |
| 117 | 3.2.3 | Write SQL script to designate primary and foreign keys of new tables in the database |  | 1d | 2024-03-13 | 2024-03-14 | 116 | 0d |  | Database Administrator | 8h | 272 |
| 118 | 3.3 | **Update Server and API Interfaces** |  | 8d | 2024-03-14 | 2024-03-26 |  | 0d |  |  | 80h | 4,552 |
| 119 | 3.3.1 | **Create endpoints** |  | 1d | 2024-03-14 | 2024-03-15 |  | 0d |  |  | 24h | 1,304 |
| 120 | 3.3.1.1 | Create endpoints in server to allow for modification of new database tables |  | 1d | 2024-03-14 | 2024-03-15 | 117 | 0d |  | Senior Developer | 8h | 544 |
| 121 | 3.3.1.2 | Create endpoints in user API interface that allow suppliers to post and remove products from marketplace |  | 1d | 2024-03-14 | 2024-03-15 | 120SS | 0d |  | Junior Developer | 8h | 296 |
| 122 | 3.3.1.3 | Create GET endpoints in Medisail API interface to access customer and supplier statistics data |  | 1d | 2024-03-14 | 2024-03-15 | 121SS | 0d |  | Back End Developer | 8h | 464 |
| 123 | 3.3.1.4 | Create endpoints complete | milestone | 0d | 2024-03-15 | 2024-03-15 | 120, 121, 122 | 0d |  |  |  |  |
| 124 | 3.3.2 | Test endpoints in Postman |  | 2d | 2024-03-15 | 2024-03-19 | 123 | 0d |  | Back End Developer | 16h | 928 |
| 125 | 3.3.3 | Develop functionality for statistics charting in Medisail API interface |  | 5d | 2024-03-19 | 2024-03-26 | 124 | 0d |  | Back End Developer | 40h | 2,320 |
| 126 | 3.4 | **Update User Interfaces** |  | 11d | 2024-03-19 | 2024-04-03 |  | 5d |  |  | 80h | 4,560 |
| 127 | 3.4.1 | **Supplier User Interface** |  | 4d | 2024-03-19 | 2024-03-25 |  | 173.5d |  |  | 32h | 1,824 |
| 128 | 3.4.1.1 | Develop UI components that allow suppliers to post new products to the marketplace |  | 3d | 2024-03-19 | 2024-03-22 | 125SS | 173.5d | 0d | Front End Developer | 24h | 1,368 |
| 129 | 3.4.1.2 | Test user interface to ensure that components correctly map to API endpoints |  | 1d | 2024-03-22 | 2024-03-25 | 128 | 173.5d |  | Front End Developer | 8h | 456 |
| 130 | 3.4.2 | **Medisail User Interface** |  | 6d | 2024-03-26 | 2024-04-03 |  | 0d |  |  | 48h | 2,736 |
| 131 | 3.4.2.1 | Develop UI components that allow Medisail employees to view analytics data rendered from API endpoints connected to new database tables |  | 4d | 2024-03-26 | 2024-04-01 | 125 | 0d |  | Front End Developer | 32h | 1,824 |
| 132 | 3.4.2.2 | Test user interface to ensure that components correct map to API endpoints |  | 2d | 2024-04-01 | 2024-04-03 | 131 | 0d |  | Front End Developer | 16h | 912 |

| ID | WBS | Task | Type | Duration | Start | Finish | Predecessors | Total slack | Free slack | Resources | Work | Cost |
| --- | --- | --- | --- | --- | --- | --- | --- | --- | --- | --- | --- | --- |
| 133 | 3.5 | **Test Integrated System** |  | 48d | 2024-04-03 | 2024-06-10 |  | 0d |  |  | 1028h | 49,908 |
| 134 | 3.5.1 | **Unit Testing** |  | 15d | 2024-04-03 | 2024-04-24 |  | 0d |  |  | 304h | 13,680 |
| 135 | 3.5.1.1 | **Write unit/interface tests** |  | 4d | 2024-04-03 | 2024-04-09 |  | 0d |  |  | 72h | 2,184 |
| 136 | 3.5.1.1.1 | Write unit tests for new server functionality |  | 1d | 2024-04-03 | 2024-04-04 | 132 | 0d |  | QA Tester 1 | 8h | 200 |
| 137 | 3.5.1.1.2 | Write unit tests for new Medisail API interface endpoints |  | 1d | 2024-04-03 | 2024-04-04 | 136SS | 0d |  | QA Tester 2 | 8h | 200 |
| 138 | 3.5.1.1.3 | Write unit tests for user API interface that ensure that customers don't have access to posting new products |  | 1d | 2024-04-03 | 2024-04-04 | 137SS | 0d |  | Junior Developer | 8h | 296 |
| 139 | 3.5.1.1.4 | Write tests for customer user interface |  | 1d | 2024-04-04 | 2024-04-05 | 138 | 0d |  | QA Tester 1 | 8h | 200 |
| 140 | 3.5.1.1.5 | Write tests for supplier user interface marketplace product posting rendering capabilities |  | 1d | 2024-04-04 | 2024-04-05 | 139SS | 0d |  | QA Tester 2 | 8h | 200 |
| 141 | 3.5.1.1.6 | Write tests for Medisail user interface data analytics rendering capabilities |  | 2d | 2024-04-04 | 2024-04-08 | 140SS | 0d |  | Junior Developer | 16h | 592 |
| 142 | 3.5.1.1.7 | Write tests for marketplace interface to ensure that new product postings are correctly rendered |  | 1d | 2024-04-08 | 2024-04-09 | 141 | 0d |  | QA Tester 2 | 8h | 200 |
| 143 | 3.5.1.1.8 | Write tests for shopping cart interface |  | 1d | 2024-04-08 | 2024-04-09 | 142SS | 0d |  | Junior Developer | 8h | 296 |
| 144 | 3.5.1.1.9 | Write unit/interface tests complete | milestone | 0d | 2024-04-09 | 2024-04-09 | 143, 142, 140, 139, 138, 137, 136, 141 | 0d |  |  |  |  |
| 145 | 3.5.1.2 | **Conduct unit/interface tests** |  | 2d | 2024-04-09 | 2024-04-11 |  | 0d |  |  | 32h | 800 |
| 146 | 3.5.1.2.1 | Conduct back end unit tests |  | 2d | 2024-04-09 | 2024-04-11 | 144 | 0d |  | QA Tester 1 | 16h | 400 |
| 147 | 3.5.1.2.2 | Conduct user interface tests |  | 2d | 2024-04-09 | 2024-04-11 | 146SS | 0d |  | QA Tester 2 | 16h | 400 |
| 148 | 3.5.1.3 | Communicate results of unit tests with development team |  | 2d | 2024-04-11 | 2024-04-15 | 147 | 0d |  | QA Tester 1; IT Manager; Senior Developer | 48h | 2,576 |
| 149 | 3.5.1.4 | Modify system based on test results (if needed) |  | 5d | 2024-04-15 | 2024-04-22 | 148 | 0d |  | Senior Developer; Front End Developer; Back End Developer | 120h | 7,320 |
| 150 | 3.5.1.5 | **Retesting unit/interface** |  | 2d | 2024-04-22 | 2024-04-24 |  | 0d |  |  | 32h | 800 |
| 151 | 3.5.1.5.1 | Retest user interfaces |  | 2d | 2024-04-22 | 2024-04-24 | 149 | 0d |  | QA Tester 1 | 16h | 400 |
| 152 | 3.5.1.5.2 | Reteset back end |  | 2d | 2024-04-22 | 2024-04-24 | 151SS | 0d |  | QA Tester 2 | 16h | 400 |
| 153 | 3.5.2 | **Integration Testing** |  | 16d | 2024-04-24 | 2024-05-16 |  | 0d |  |  | 364h | 16,364 |
| 154 | 3.5.2.1 | **Write integration tests** |  | 4d | 2024-04-24 | 2024-04-30 |  | 0d |  |  | 76h | 2,044 |
| 155 | 3.5.2.1.1 | Write integration tests between supplier user interface and server |  | 2d | 2024-04-24 | 2024-04-26 | 152 | 0d |  | QA Tester 1 | 16h | 400 |
| 156 | 3.5.2.1.2 | Write integration tests between user API interface and database |  | 2d | 2024-04-26 | 2024-04-30 | 155 | 147.5d |  | QA Tester 1 | 16h | 400 |
| 157 | 3.5.2.1.3 | Write integration tests between Medisail user interface and server |  | 2d | 2024-04-24 | 2024-04-26 | 155SS | 0d |  | QA Tester 2 | 16h | 400 |
| 158 | 3.5.2.1.4 | Write integration tests between Medisail API interface and database |  | 2d | 2024-04-26 | 2024-04-30 | 157 | 0d |  | QA Tester 2 | 16h | 400 |
| 159 | 3.5.2.1.5 | Write integration tests between marketplace user interface and server |  | 1d | 2024-04-24 | 2024-04-25 | 157SS | 2.5d | 0d | Junior Developer | 8h | 296 |
| 160 | 3.5.2.1.6 | Write mocked integration tests between user interfaces and database |  | 0.5d | 2024-04-25 | 2024-04-25 | 159 | 2.5d |  | Junior Developer | 4h | 148 |
| 161 | 3.5.2.1.7 | Write integration tests complete | milestone | 0d | 2024-04-30 | 2024-04-30 | 155, 157, 159, 158, 160 | 0d |  |  |  |  |

| ID | WBS | Task | Type | Duration | Start | Finish | Predecessors | Total slack | Resources | Work | Cost |
| --- | --- | --- | --- | --- | --- | --- | --- | --- | --- | --- | --- |
| 162 | 3.5.2.2 | **Conduct integration tests** |  | 2d | 2024-04-30 | 2024-05-02 |  | 0d |  | 48h | 1,392 |
| 163 | 3.5.2.2.1 | Conduct integration tests between user interfaces and server |  | 2d | 2024-04-30 | 2024-05-02 | 161 | 0d | QA Tester 1 | 16h | 400 |
| 164 | 3.5.2.2.2 | Conduct integration tests between server and database |  | 2d | 2024-04-30 | 2024-05-02 | 163SS | 0d | QA Tester 2 | 16h | 400 |
| 165 | 3.5.2.2.3 | Conduct integration tests between user interfaces and database |  | 2d | 2024-04-30 | 2024-05-02 | 164SS | 0d | Junior Developer | 16h | 592 |
| 166 | 3.5.2.2.4 | Conduct integration tests complete | milestone | 0d | 2024-05-02 | 2024-05-02 | 163, 164, 165 | 0d |  |  |  |
| 167 | 3.5.2.3 | Communicate results of integration tests with development team |  | 1d | 2024-05-02 | 2024-05-03 | 166 | 0d | QA Tester 1; IT Manager; Senior Developer | 24h | 1,288 |
| 168 | 3.5.2.4 | Modify system based on test results (if needed) |  | 7d | 2024-05-03 | 2024-05-14 | 167 | 0d | Senior Developer; Back End Developer; Front End Developer | 168h | 10,248 |
| 169 | 3.5.2.5 | **Retesting integration** |  | 2d | 2024-05-14 | 2024-05-16 |  | 0d |  | 48h | 1,392 |
| 170 | 3.5.2.5.1 | Retest integration between user interface and server |  | 2d | 2024-05-14 | 2024-05-16 | 168 | 0d | QA Tester 1 | 16h | 400 |
| 171 | 3.5.2.5.2 | Retest integration between server and database |  | 2d | 2024-05-14 | 2024-05-16 | 170SS | 0d | QA Tester 2 | 16h | 400 |
| 172 | 3.5.2.5.3 | Retest integration between user interface and database |  | 2d | 2024-05-14 | 2024-05-16 | 171SS | 0d | Junior Developer | 16h | 592 |
| 173 | 3.5.2.5.4 | Retest integration complete | milestone | 0d | 2024-05-16 | 2024-05-16 | 172, 171, 170 | 0d |  |  |  |
| 174 | 3.5.3 | **System Testing** |  | 17d | 2024-05-16 | 2024-06-10 |  | 0d |  | 360h | 19,864 |
| 175 | 3.5.3.1 | Write system tests of the entire integrated system |  | 3d | 2024-05-16 | 2024-05-21 | 173 | 0d | QA Tester 1 | 24h | 600 |
| 176 | 3.5.3.2 | Conduct system tests of the integrated system |  | 3d | 2024-05-21 | 2024-05-24 | 175 | 0d | QA Tester 1; Senior Developer; Project Manager | 72h | 3,864 |
| 177 | 3.5.3.3 | Communicate results of system tests with development teams |  | 1d | 2024-05-24 | 2024-05-27 | 176 | 0d | Project Manager; QA Tester 1; Senior Developer | 24h | 1,288 |
| 178 | 3.5.3.4 | Modify system based on test results (if needed) |  | 7d | 2024-05-27 | 2024-06-05 | 177 | 0d | Senior Developer; Back End Developer; Front End Developer | 168h | 10,248 |
| 179 | 3.5.3.5 | Reconduct system tests |  | 3d | 2024-06-05 | 2024-06-10 | 178 | 0d | QA Tester 1; Senior Developer; Project Manager | 72h | 3,864 |
| 180 | 3.6 | Write documentation for integrated system |  | 3d | 2024-06-10 | 2024-06-13 | 179 | 0d | Project Manager; Senior Developer; Sales Manager | 72h | 4,776 |
| 181 | 3.7 | **Deploy Release 2** |  | 19d | 2024-06-05 | 2024-07-02 |  | 6d |  | 176h | 11,448 |
| 182 | 3.7.1 | **Conduct Required Trainings** |  | 3d | 2024-06-13 | 2024-06-18 |  | 0d |  | 40h | 2,640 |
| 183 | 3.7.1.1 | Update sales manager on new capabilities of integrated e-procurement system |  | 2d | 2024-06-13 | 2024-06-17 | 180 | 0d | Sales Manager | 16h | 1,008 |
| 184 | 3.7.1.2 | Train Medisail non-technical employees on integrated e-procurement system analytics capabilities |  | 3d | 2024-06-13 | 2024-06-18 | 183SS | 0d | Project Manager | 24h | 1,632 |
| 185 | 3.7.2 | **Pre-Deployment Marketing** |  | 1d | 2024-06-05 | 2024-06-06 |  | 120.5d |  | 8h | 504 |
| 186 | 3.7.2.1 | Create advertisement materials for integrated product |  | 1d | 2024-06-05 | 2024-06-06 | 179SS | 120.5d | Sales Manager | 8h | 504 |

| ID | WBS | Task | Type | Duration | Start | Finish | Predecessors | Total slack | Free slack | Resources | Work | Cost |
| --- | --- | --- | --- | --- | --- | --- | --- | --- | --- | --- | --- | --- |
| 187 | 3.7.3 | **Product Deployment** |  | 6d | 2024-06-18 | 2024-06-26 |  | 0d |  |  | 48h | 3,264 |
| 188 | 3.7.3.1 | Deploy integrated system |  | 1d | 2024-06-18 | 2024-06-19 | 184 | 0d |  | Senior Developer | 8h | 544 |
| 189 | 3.7.3.2 | Monitor system performance after deployment |  | 5d | 2024-06-19 | 2024-06-26 | 188 | 106.5d |  | Senior Developer | 40h | 2,720 |
| 190 | 3.7.4 | **Collect Supplier Feedback on Analytics Capabilities** |  | 10d | 2024-06-18 | 2024-07-02 |  | 0d |  |  | 80h | 5,040 |
| 191 | 3.7.4.1 | Create Medisail non-technical employee survey about new analytics capabilities |  | 0.5d | 2024-06-18 | 2024-06-18 | 188SS | 0d |  | Sales Manager | 4h | 252 |
| 192 | 3.7.4.2 | Send survey to Medisail non-technical employees who use the system and wait for results |  | 7d | 2024-06-18 | 2024-06-27 | 191 | 0d |  | Sales Manager | 56h | 3,528 |
| 193 | 3.7.4.3 | Collect and analyze supplier feedback |  | 2d | 2024-06-27 | 2024-07-01 | 192 | 102.5d | 0d | Sales Manager | 16h | 1,008 |
| 194 | 3.7.4.4 | Share survey feedback with team |  | 0.5d | 2024-07-01 | 2024-07-02 | 193 | 102.5d |  | Sales Manager | 4h | 252 |
| 195 | 4 | **Phase 3: Advanced System Release** |  | 101d | 2024-06-18 | 2024-11-06 |  | 0d |  |  | 2008h | 103,368 |
| 196 | 4.1 | **Adjust Plan Based on Supplier Feedback** |  | 1d | 2024-06-18 | 2024-06-19 |  | 0d |  |  | 8h | 544 |
| 197 | 4.1.1 | Revise Release 3 requirements based on feedback assessment |  | 1d | 2024-06-18 | 2024-06-19 | 192SS | 0d |  | Project Manager | 8h | 544 |
| 198 | 4.2 | **Update Backend for Advanced Analytics** |  | 15d | 2024-06-18 | 2024-07-09 |  | 1d |  |  | 264h | 13,072 |
| 199 | 4.2.1 | **User API Interface** |  | 6d | 2024-06-18 | 2024-06-26 |  | 1d |  |  | 72h | 3,408 |
| 200 | 4.2.1.1 | Write SQL queries to query analytics data from database for suppliers |  | 2d | 2024-06-18 | 2024-06-20 | 192SS | 108d | 0d | Database Administrator | 16h | 544 |
| 201 | 4.2.1.2 | Write SQL queries to query analytics data from database for customers |  | 2d | 2024-06-20 | 2024-06-24 | 200 | 108d |  | Database Administrator | 16h | 544 |
| 202 | 4.2.1.3 | **Create endpoints** |  | 2d | 2024-06-19 | 2024-06-21 |  | 0d |  |  | 16h | 928 |
| 203 | 4.2.1.3.1 | Create endpoints for analytics data for supplier UI |  | 1d | 2024-06-19 | 2024-06-20 | 197 | 0d |  | Back End Developer | 8h | 464 |
| 204 | 4.2.1.3.2 | Create endpoints for analytics data for user UI |  | 1d | 2024-06-20 | 2024-06-21 | 203 | 0d |  | Back End Developer | 8h | 464 |
| 205 | 4.2.1.4 | Test endpoints to ensure that supplier and user analytics data is mapped correctly |  | 3d | 2024-06-21 | 2024-06-26 | 204 | 0d |  | Back End Developer | 24h | 1,392 |
| 206 | 4.2.2 | **Tableau Functionality** |  | 9d | 2024-06-26 | 2024-07-09 |  | 0d |  |  | 192h | 9,664 |
| 207 | 4.2.2.1 | Negotiate and obtain Tableau licence |  | 5d | 2024-06-26 | 2024-07-03 | 205 | 0d |  | Project Manager | 40h | 2,720 |
| 208 | 4.2.2.2 | Review Tableau documentation |  | 3d | 2024-06-26 | 2024-07-01 | 207SS | 0d |  | Database Administrator | 24h | 816 |
| 209 | 4.2.2.3 | Create Tableau-specific API endpoints for customers |  | 2d | 2024-07-01 | 2024-07-03 | 208 | 101d |  | Database Administrator | 16h | 544 |
| 210 | 4.2.2.4 | Refine database tables as needed per Tableau documentation |  | 4d | 2024-06-26 | 2024-07-02 | 208SS | 0d |  | Back End Developer | 32h | 1,856 |
| 211 | 4.2.2.5 | Create Tableau-specific API endpoints for Medisail non-technical employees |  | 2d | 2024-07-02 | 2024-07-04 | 210 | 0d |  | Back End Developer | 16h | 928 |
| 212 | 4.2.2.6 | Create Tableau-specific API endpoints for suppliers |  | 2d | 2024-06-26 | 2024-06-28 | 210SS | 4d |  | Junior Developer | 16h | 592 |
| 213 | 4.2.2.7 | Tableau functionality complete | milestone | 0d | 2024-07-04 | 2024-07-04 | 207, 208, 210, 212, 211 | 0d |  |  |  |  |
| 214 | 4.2.2.8 | Test all Tableau endpoints |  | 3d | 2024-07-04 | 2024-07-09 | 213 | 0d |  | Database Administrator; Back End Developer | 48h | 2,208 |

| ID | WBS | Task | Type | Duration | Start | Finish | Predecessors | Total slack | Free slack | Resources | Work | Cost |
| --- | --- | --- | --- | --- | --- | --- | --- | --- | --- | --- | --- | --- |
| 215 | 4.3 | **Update Frontend for Advanced Analytics** |  | 10d | 2024-07-09 | 2024-07-23 |  | 0d |  |  | 184h | 10,072 |
| 216 | 4.3.1 | Create UI components in customer user interface to render analytics data from database |  | 5d | 2024-07-09 | 2024-07-16 | 214 | 0d |  | Front End Developer | 40h | 2,280 |
| 217 | 4.3.2 | Create UI components in customer user interface to render Tableau graphics and charts |  | 3d | 2024-07-09 | 2024-07-12 | 216SS | 1d | 0d | Senior Developer | 24h | 1,632 |
| 218 | 4.3.3 | Create UI components in supplier user interface to render Tableau graphics and charts |  | 3d | 2024-07-12 | 2024-07-17 | 217 | 1d |  | Senior Developer | 24h | 1,632 |
| 219 | 4.3.4 | Create UI components in supplier user interface to render analytics data from database |  | 4d | 2024-07-09 | 2024-07-15 | 216SS | 0d |  | Junior Developer | 32h | 1,184 |
| 220 | 4.3.5 | Create UI components in Medisail user interface to render Tableau graphics and charts |  | 3d | 2024-07-15 | 2024-07-18 | 219 | 0d |  | Junior Developer | 24h | 888 |
| 221 | 4.3.6 | Create UI components complete | milestone | 0d | 2024-07-18 | 2024-07-18 | 216, 217, 218, 220 | 0d |  |  |  |  |
| 222 | 4.3.7 | Test database analytics rendering in customer and supplier user interfaces |  | 2d | 2024-07-18 | 2024-07-22 | 221 | 88d |  | Senior Developer | 16h | 1,088 |
| 223 | 4.3.8 | Test Tableau integration in all user interfaces |  | 3d | 2024-07-18 | 2024-07-23 | 221 | 87d |  | Front End Developer | 24h | 1,368 |
| 224 | 4.4 | **Test Advanced System** |  | 59d | 2024-07-18 | 2024-10-09 |  | 0d |  |  | 1216h | 57,632 |
| 225 | 4.4.1 | **Unit Testing** |  | 22d | 2024-07-18 | 2024-08-19 |  | 0d |  |  | 384h | 15,280 |
| 226 | 4.4.1.1 | **Write unit/interface/Tableau tests** |  | 7d | 2024-07-18 | 2024-07-29 |  | 0d |  |  | 136h | 4,072 |
| 227 | 4.4.1.1.1 | Write unit tests for data analytics API endpoints to ensure that only applicable data is accessible |  | 2d | 2024-07-18 | 2024-07-22 | 221 | 0d |  | QA Tester 1 | 16h | 400 |
| 228 | 4.4.1.1.2 | Write unit tests for Tableau API endpoints |  | 2d | 2024-07-18 | 2024-07-22 | 227SS | 0d |  | QA Tester 2 | 16h | 400 |
| 229 | 4.4.1.1.3 | Write unit tests for new Medisail API interface endpoints to ensure that all data analytics is accessable |  | 2d | 2024-07-18 | 2024-07-22 | 228SS | 0d |  | Junior Developer | 16h | 592 |
| 230 | 4.4.1.1.4 | Write tests for customer user interface data analytics capabilities |  | 1d | 2024-07-22 | 2024-07-23 | 229 | 0d |  | QA Tester 1 | 8h | 200 |
| 231 | 4.4.1.1.5 | Write tests for supplier user interface data analytics capabilities |  | 1d | 2024-07-22 | 2024-07-23 | 230SS | 0d |  | QA Tester 2 | 8h | 200 |
| 232 | 4.4.1.1.6 | Write tests for Medisail user interface data analytics rendering capabilities |  | 2d | 2024-07-22 | 2024-07-24 | 231SS | 0d |  | Junior Developer | 16h | 592 |
| 233 | 4.4.1.1.7 | Write tests for Tableau integration in customer user interface |  | 2d | 2024-07-24 | 2024-07-26 | 232 | 0d |  | QA Tester 1 | 16h | 400 |
| 234 | 4.4.1.1.8 | Write tests for Tableau integration in supplier user interface |  | 2d | 2024-07-24 | 2024-07-26 | 233SS | 0d |  | QA Tester 2 | 16h | 400 |
| 235 | 4.4.1.1.9 | Write tests for Tableau integration in Medisail user interface |  | 3d | 2024-07-24 | 2024-07-29 | 234SS | 0d |  | Junior Developer | 24h | 888 |
| 236 | 4.4.1.1.10 | Write unit/interface/Tableau tests complete | milestone | 0d | 2024-07-29 | 2024-07-29 | 235, 234, 233, 232, 231, 230, 229, 228, 227 | 0d |  |  |  |  |
| 237 | 4.4.1.2 | **Conduct unit/interface tests** |  | 5d | 2024-07-29 | 2024-08-05 |  | 0d |  |  | 72h | 1,800 |
| 238 | 4.4.1.2.1 | Conduct back end unit tests |  | 5d | 2024-07-29 | 2024-08-05 | 236 | 0d |  | QA Tester 1 | 40h | 1,000 |
| 239 | 4.4.1.2.2 | Conduct user interface tests |  | 4d | 2024-07-29 | 2024-08-02 | 238SS | 1d |  | QA Tester 2 | 32h | 800 |
| 240 | 4.4.1.2.3 | Conduct tests complete | milestone | 0d | 2024-08-05 | 2024-08-05 | 238, 239 | 0d |  |  |  |  |
| 241 | 4.4.1.3 | Communicate results of unit tests with development team |  | 1d | 2024-08-05 | 2024-08-06 | 240 | 0d |  | QA Tester 1; IT Manager; Senior Developer | 24h | 1,288 |
| 242 | 4.4.1.4 | Modify system based on test results (if needed) |  | 5d | 2024-08-06 | 2024-08-13 | 241 | 0d |  | Senior Developer; Front End Developer; Back End Developer | 120h | 7,320 |
| 243 | 4.4.1.5 | Retest user interfaces |  | 2d | 2024-08-13 | 2024-08-15 | 242 | 0d |  | QA Tester 1 | 16h | 400 |
| 244 | 4.4.1.6 | Reteset back end |  | 2d | 2024-08-15 | 2024-08-19 | 243 | 0d |  | QA Tester 2 | 16h | 400 |

| ID | WBS | Task | Type | Duration | Start | Finish | Predecessors | Total slack | Free slack | Resources | Work | Cost |
| --- | --- | --- | --- | --- | --- | --- | --- | --- | --- | --- | --- | --- |
| 245 | 4.4.2 | **Integration Testing** |  | 16d | 2024-08-19 | 2024-09-10 |  | 0d |  |  | 376h | 16,808 |
| 246 | 4.4.2.1 | **Write integration tests** |  | 5d | 2024-08-19 | 2024-08-26 |  | 0d |  |  | 112h | 3,184 |
| 247 | 4.4.2.1.1 | Write integration tests between supplier user interface and server |  | 2d | 2024-08-19 | 2024-08-21 | 244 | 0d |  | QA Tester 1 | 16h | 400 |
| 248 | 4.4.2.1.2 | Write integration tests between Medisail user interface and server |  | 2d | 2024-08-19 | 2024-08-21 | 247SS | 0d |  | QA Tester 2 | 16h | 400 |
| 249 | 4.4.2.1.3 | Write integration tests between marketplace user interface and server |  | 2d | 2024-08-19 | 2024-08-21 | 248SS | 0d |  | Junior Developer | 16h | 592 |
| 250 | 4.4.2.1.4 | Write integration tests between user API interface and database |  | 3d | 2024-08-21 | 2024-08-26 | 249 | 0d |  | QA Tester 1 | 24h | 600 |
| 251 | 4.4.2.1.5 | Write integration tests between Medisail API interface and database |  | 3d | 2024-08-21 | 2024-08-26 | 250SS | 1d | 0d | QA Tester 2 | 24h | 600 |
| 252 | 4.4.2.1.6 | Write mocked integration tests between user interfaces and database |  | 2d | 2024-08-21 | 2024-08-23 | 251SS | 1d |  | Junior Developer | 16h | 592 |
| 253 | 4.4.2.1.7 | Write integration tests complete | milestone | 0d | 2024-08-26 | 2024-08-26 | 247, 248, 249, 250, 252 | 0d |  |  |  |  |
| 254 | 4.4.2.2 | **Conduct integration tests** |  | 1d | 2024-08-26 | 2024-08-27 |  | 0d |  |  | 24h | 696 |
| 255 | 4.4.2.2.1 | Conduct integration tests between user interfaces and server |  | 1d | 2024-08-26 | 2024-08-27 | 253 | 0d |  | QA Tester 1 | 8h | 200 |
| 256 | 4.4.2.2.2 | Conduct integration tests between server and database |  | 1d | 2024-08-26 | 2024-08-27 | 255SS | 0d |  | QA Tester 2 | 8h | 200 |
| 257 | 4.4.2.2.3 | Conduct integration tests between user interfaces and database |  | 1d | 2024-08-26 | 2024-08-27 | 256SS | 0d |  | Junior Developer | 8h | 296 |
| 258 | 4.4.2.2.4 | Conduct integration tests complete | milestone | 0d | 2024-08-27 | 2024-08-27 | 255, 256, 257 | 0d |  |  |  |  |
| 259 | 4.4.2.3 | Communicate results of integration tests with development team |  | 1d | 2024-08-27 | 2024-08-28 | 258 | 0d |  | QA Tester 1; IT Manager; Senior Developer | 24h | 1,288 |
| 260 | 4.4.2.4 | Modify system based on test results (if needed) |  | 7d | 2024-08-28 | 2024-09-06 | 259 | 0d |  | Back End Developer; Front End Developer; Senior Developer | 168h | 10,248 |
| 261 | 4.4.2.5 | **Retest integration** |  | 2d | 2024-09-06 | 2024-09-10 |  | 0d |  |  | 48h | 1,392 |
| 262 | 4.4.2.5.1 | Retest integration between user interface and server |  | 2d | 2024-09-06 | 2024-09-10 | 260 | 0d |  | QA Tester 1 | 16h | 400 |
| 263 | 4.4.2.5.2 | Retest integration between server and database |  | 2d | 2024-09-06 | 2024-09-10 | 262SS | 0d |  | QA Tester 2 | 16h | 400 |
| 264 | 4.4.2.5.3 | Retest integration between user interface and database |  | 2d | 2024-09-06 | 2024-09-10 | 263SS | 0d |  | Junior Developer | 16h | 592 |
| 265 | 4.4.2.5.4 | Retest integration complete | milestone | 0d | 2024-09-10 | 2024-09-10 | 264, 263, 262 | 0d |  |  |  |  |
| 266 | 4.4.3 | **System Testing** |  | 21d | 2024-09-10 | 2024-10-09 |  | 0d |  |  | 456h | 25,544 |
| 267 | 4.4.3.1 | Write system tests of the entire advanced system |  | 3d | 2024-09-10 | 2024-09-13 | 265 | 0d |  | QA Tester 1 | 24h | 600 |
| 268 | 4.4.3.2 | Conduct system tests of the advanced system |  | 2d | 2024-09-13 | 2024-09-17 | 267 | 0d |  | QA Tester 1; Senior Developer; Project Manager | 48h | 2,576 |
| 269 | 4.4.3.3 | Communicate results of system tests with development teams |  | 2d | 2024-09-17 | 2024-09-19 | 268 | 0d |  | Project Manager; Senior Developer; QA Tester 1 | 48h | 2,576 |
| 270 | 4.4.3.4 | Modify system based on test results (if needed) |  | 10d | 2024-09-19 | 2024-10-03 | 269 | 0d |  | Senior Developer; Back End Developer; Front End Developer | 240h | 14,640 |
| 271 | 4.4.3.5 | Reconduct system tests |  | 4d | 2024-10-03 | 2024-10-09 | 270 | 0d |  | QA Tester 1; Senior Developer; Project Manager | 96h | 5,152 |
| 272 | 4.5 | Write documentation for advanced system |  | 5d | 2024-10-09 | 2024-10-16 | 271 | 0d |  | Project Manager; Senior Developer; Sales Manager | 120h | 7,960 |

| ID | WBS | Task | Duration | Start | Finish | Predecessors | Total slack | Free slack | Resources | Work | Cost |
| --- | --- | --- | --- | --- | --- | --- | --- | --- | --- | --- | --- |
| 273 | 4.6 | **Deploy Release 3** | 34d | 2024-09-19 | 2024-11-06 |  | 0d |  |  | 216h | 14,088 |
| 274 | 4.6.1 | **Conduct Required Trainings** | 9d | 2024-10-16 | 2024-10-29 |  | 0d |  |  | 72h | 4,776 |
| 275 | 4.6.1.1 | Update sales manager on new capabilities of advanced e-procurement system | 3d | 2024-10-16 | 2024-10-21 | 272 | 0d |  | Sales Manager | 24h | 1,512 |
| 276 | 4.6.1.2 | Train Medisail non-technical employees on new analytics capabilities | 2d | 2024-10-21 | 2024-10-23 | 275 | 0d |  | Project Manager | 16h | 1,088 |
| 277 | 4.6.1.3 | Train customers on new analytics capabilities | 2d | 2024-10-23 | 2024-10-25 | 276 | 0d |  | Project Manager | 16h | 1,088 |
| 278 | 4.6.1.4 | Train suppliers on new analytics capabilities | 2d | 2024-10-25 | 2024-10-29 | 277 | 0d |  | Project Manager | 16h | 1,088 |
| 279 | 4.6.2 | **Pre-Deployment Marketing** | 12d | 2024-09-19 | 2024-10-07 |  | 16d |  |  | 96h | 6,048 |
| 280 | 4.6.2.1 | Create advertisement materials for advanced product | 1d | 2024-09-19 | 2024-09-20 | 270SS | 16d | 0d | Sales Manager | 8h | 504 |
| 281 | 4.6.2.2 | Conduct sales calls with potential new suppliers | 1d | 2024-09-20 | 2024-09-23 | 280 | 16d | 0d | Sales Manager | 8h | 504 |
| 282 | 4.6.2.3 | Conduct sales calls with potential new customers | 10d | 2024-09-23 | 2024-10-07 | 281 | 16d |  | Sales Manager | 80h | 5,040 |
| 283 | 4.6.3 | **Product Deployment** | 6d | 2024-10-29 | 2024-11-06 |  | 0d |  |  | 48h | 3,264 |
| 284 | 4.6.3.1 | Deploy advanced system | 1d | 2024-10-29 | 2024-10-30 | 282, 278 | 0d |  | Senior Developer | 8h | 544 |
| 285 | 4.6.3.2 | Monitor system performance after deployment | 5d | 2024-10-30 | 2024-11-06 | 284 | 0d |  | Senior Developer | 40h | 2,720 |
| 286 | 5 | **End of Project Activities** | 11d | 2024-11-06 | 2024-11-21 |  | 0d |  |  | 296h | 18,848 |
| 287 | 5.1 | **Product Adoption** | 11d | 2024-11-06 | 2024-11-21 |  | 0d |  |  | 104h | 6,632 |
| 288 | 5.1.1 | Plan product education workshops for customers and suppliers | 2d | 2024-11-06 | 2024-11-08 | 285 | 0d |  | Sales Manager | 16h | 1,008 |
| 289 | 5.1.2 | Schedule product education workshops | 1d | 2024-11-08 | 2024-11-11 | 288 | 0d |  | Sales Manager | 8h | 504 |
| 290 | 5.1.3 | Conduct product education workshops | 5d | 2024-11-11 | 2024-11-18 | 289 | 0d |  | Sales Manager | 40h | 2,520 |
| 291 | 5.1.4 | Gather feedback from customers and suppliers during workshops | 1d | 2024-11-18 | 2024-11-19 | 290 | 0d |  | Sales Manager | 8h | 504 |
| 292 | 5.1.5 | Train Medisail sales teams and customer support on product | 2d | 2024-11-19 | 2024-11-21 | 291 | 0d |  | Sales Manager; Project Manager | 32h | 2,096 |
| 293 | 5.2 | **Continuous Improvement** | 10d | 2024-11-06 | 2024-11-20 |  | 1d |  |  | 192h | 12,216 |
| 294 | 5.2.1 | Send monthly surveys to customers and suppliers | 1d | 2024-11-06 | 2024-11-07 | 288SS | 1d | 0d | Project Manager | 8h | 544 |
| 295 | 5.2.2 | Gather feedback from surveys | 1d | 2024-11-07 | 2024-11-08 | 294 | 1d | 0d | Project Manager | 8h | 544 |
| 296 | 5.2.3 | Discuss results of surveys | 1d | 2024-11-08 | 2024-11-11 | 295 | 1d | 0d | Project Manager | 8h | 544 |
| 297 | 5.2.4 | Determine feasibility of improvements suggested in survey results | 2d | 2024-11-11 | 2024-11-13 | 296 | 1d | 0d | Project Manager; Senior Developer; IT Manager | 48h | 3,264 |
| 298 | 5.2.5 | Implement accepted improvements to software system | 5d | 2024-11-13 | 2024-11-20 | 297 | 1d |  | Senior Developer; Back End Developer; Front End Developer | 120h | 7,320 |
