Schedule from MS Project, 2023-10-23 to 2024-12-03, costs in $.

## Calendars

- Standard: Mon-Fri 08:00-12:00, 13:00-17:00; Sat-Sun off.

## Resources

| Resource | Rate |
| --- | --- |
| Database Administrator | 34 |
| Senior Developer | 68 |
| Front End Developer | 57 |
| Back End Developer | 58 |
| QA Tester | 25 |
| IT Manager | 68 |
| Project Manager | 68 |
| Sales Manager | 63 |
| System Administrator | 53 |

## Schedule

| ID | WBS | Task | Duration | Start | Finish | Predecessors | Total slack | Resources | Work | Cost |
| --- | --- | --- | --- | --- | --- | --- | --- | --- | --- | --- |
| 1 | 1 | **Pre-Development Activities** | 31d | 2023-10-23 | 2023-12-04 |  | 0d |  | 984h | 58,120 |
| 2 | 1.1 | Perform Business Analysis | 14d | 2023-10-23 | 2023-11-09 |  | 0d | Sales Manager | 112h | 7,056 |
| 3 | 1.2 | Investigate Requirements | 14d | 2023-10-23 | 2023-11-09 |  | 0d | Project Manager; IT Manager; Senior Developer | 336h | 22,848 |
| 4 | 1.3 | **Perform Feasibility Study** | 3d | 2023-11-10 | 2023-11-14 |  | 0d |  | 24h | 1,632 |
| 5 | 1.3.1 | Confirm System Configuration Requirements | 3d | 2023-11-10 | 2023-11-14 | 3, 2 | 0d | Project Manager | 24h | 1,632 |
| 6 | 1.4 | **Project Planning** | 5d | 2023-11-15 | 2023-11-21 |  | 0d |  |  |  |
| 7 | 1.4.1 | Review System Requirements | 1d | 2023-11-15 | 2023-11-15 | 5 | 0d |  |  |  |
| 8 | 1.4.2 | Review requirements | 4d | 2023-11-16 | 2023-11-21 | 7 | 0d |  |  |  |
| 9 | 1.5 | **Install and Configure Development Environment** | 5d | 2023-11-22 | 2023-11-28 |  | 0d |  | 248h | 12,944 |
| 10 | 1.5.1 | Install Microsoft Windows 11 Operating System | 1d | 2023-11-22 | 2023-11-22 | 8 | 0d | Project Manager; IT Manager; Senior Developer; Back End Developer; Front End Developer; Database Administrator; QA Tester | 56h | 3,024 |
| 11 | 1.5.2 | Install and configure PostgreSQL | 2d | 2023-11-23 | 2023-11-24 | 10 | 0d | IT Manager; Senior Developer; Back End Developer; Front End Developer; Database Administrator; QA Tester | 96h | 4,960 |
| 12 | 1.5.3 | Install and configure SQL Interface | 2d | 2023-11-27 | 2023-11-28 | 11 | 0d | IT Manager; Senior Developer; Back End Developer; Front End Developer; Database Administrator; QA Tester | 96h | 4,960 |
| 13 | 1.6 | **Install and Configure IDEs** | 3d | 2023-11-29 | 2023-12-01 |  | 0d |  | 168h | 8,680 |
| 14 | 1.6.1 | Install Visual Studio Code IDE | 0.5d | 2023-11-29 | 2023-11-29 | 12 | 0d | IT Manager; Senior Developer; Back End Developer; Front End Developer; Database Administrator; QA Tester | 24h | 1,240 |
| 15 | 1.6.2 | Configure VS Code for Java, Javascript, HTML, CSS, and PostgreSQL dependencies | 3d | 2023-11-29 | 2023-12-01 | 14SS | 0d | Back End Developer; Database Administrator; Front End Developer; IT Manager; QA Tester; Senior Developer | 144h | 7,440 |
| 16 | 1.7 | **Install and Configure Testing Suite** | 1d | 2023-12-04 | 2023-12-04 |  | 0d |  | 96h | 4,960 |
| 17 | 1.7.1 | Install and configure Maven | 1d | 2023-12-04 | 2023-12-04 | 15 | 0d | Back End Developer; Database Administrator; Front End Developer; IT Manager; QA Tester; Senior Developer | 48h | 2,480 |
| 18 | 1.7.2 | Install and configure Junit | 1d | 2023-12-04 | 2023-12-04 | 17SS | 0d | Back End Developer; Database Administrator; Front End Developer; IT Manager; QA Tester; Senior Developer | 48h | 2,480 |
| 19 | 2 | **Phase 1: Basic Inventory, Procurement, Supplier, Distributor and Customer Management** | 76.3d | 2023-12-05 | 2024-03-20 |  | 0d |  | 1169.6h | 53,912 |
| 20 | 2.1 | Development team kickoff meeting | 1d | 2023-12-05 | 2023-12-05 | 18 | 0d |  |  |  |
| 21 | 2.2 | **Develop Core Database Capabilities** | 3.5d | 2023-12-06 | 2023-12-11 |  | 0d |  | 104h | 4,640 |
| 22 | 2.2.1 | **DBMS: Install and configure database management system** | 3.5d | 2023-12-06 | 2023-12-11 |  | 0d |  | 56h | 1,904 |
| 23 | 2.2.1.1 | Test DBMS and SQL | 0.5d | 2023-12-06 | 2023-12-06 | 20 | 0d |  |  |  |
| 24 | 2.2.1.2 | **Create Inventory DB** | 1d | 2023-12-06 | 2023-12-07 |  | 0d |  | 8h | 272 |
| 25 | 2.2.1.2.1 | Create database | 0.5d | 2023-12-06 | 2023-12-06 | 23 | 0d | Database Administrator | 4h | 136 |
| 26 | 2.2.1.2.2 | Create tables | 0.5d | 2023-12-07 | 2023-12-07 | 25 | 0d | Database Administrator | 4h | 136 |

| ID | WBS | Task | Type | Duration | Start | Finish | Predecessors | Total slack | Free slack | Resources | Work | Cost |
| --- | --- | --- | --- | --- | --- | --- | --- | --- | --- | --- | --- | --- |
| 27 | 2.2.1.3 | **Fill tables with dummy data** |  | 1d | 2023-12-07 | 2023-12-08 |  | 0d |  |  | 40h | 1,360 |
| 28 | 2.2.1.3.1 | Fill Fill Inventory table with dummy Data |  | 1d | 2023-12-07 | 2023-12-08 | 26 | 0d |  | Database Administrator | 8h | 272 |
| 29 | 2.2.1.3.2 | Fill Customer table with dummy data |  | 1d | 2023-12-07 | 2023-12-08 | 28SS | 0d |  | Database Administrator | 8h | 272 |
| 30 | 2.2.1.3.3 | Fill Distributor table with dummy data |  | 1d | 2023-12-07 | 2023-12-08 | 29SS | 0d |  | Database Administrator | 8h | 272 |
| 31 | 2.2.1.3.4 | Fill Medical Supplier table with dummy data |  | 1d | 2023-12-07 | 2023-12-08 | 30SS | 0d |  | Database Administrator | 8h | 272 |
| 32 | 2.2.1.3.5 | Fill Medical Supplies table with dummy data |  | 1d | 2023-12-07 | 2023-12-08 | 31SS | 0d |  | Database Administrator | 8h | 272 |
| 33 | 2.2.1.3.6 | Filling tables with dummy data complete | milestone | 0d | 2023-12-08 | 2023-12-08 | 28, 29, 30, 31, 32 | 0d |  |  |  |  |
| 34 | 2.2.1.4 | Write SQL script to designate primary and foreign keys of each table in the database |  | 1d | 2023-12-08 | 2023-12-11 | 33 | 0d |  | Database Administrator | 8h | 272 |
| 35 | 2.2.2 | **Mock Up User Interfaces** |  | 1d | 2023-12-06 | 2023-12-06 |  | 258.3d |  |  | 48h | 2,736 |
| 36 | 2.2.2.1 | Mock up user interface for Medisail customers |  | 1d | 2023-12-06 | 2023-12-06 | 20 | 258.3d | 0d | Front End Developer | 8h | 456 |
| 37 | 2.2.2.2 | Mock up user interface for suppliers |  | 1d | 2023-12-06 | 2023-12-06 | 36SS | 258.3d | 0d | Front End Developer | 8h | 456 |
| 38 | 2.2.2.3 | Mock up user interface for Medisail non-technical employees |  | 1d | 2023-12-06 | 2023-12-06 | 37SS | 258.3d | 0d | Front End Developer | 8h | 456 |
| 39 | 2.2.2.4 | Mock up marketplace user interface |  | 1d | 2023-12-06 | 2023-12-06 | 38SS | 258.3d | 0d | Front End Developer | 8h | 456 |
| 40 | 2.2.2.5 | Mock up shopping cart and checkout interfaces |  | 1d | 2023-12-06 | 2023-12-06 | 39SS | 258.3d | 0d | Front End Developer | 8h | 456 |
| 41 | 2.2.2.6 | Mock up login portal user interface |  | 1d | 2023-12-06 | 2023-12-06 | 40SS | 258.3d |  | Front End Developer | 8h | 456 |
| 42 | 2.3 | **Unit testing** |  | 13d | 2023-12-11 | 2023-12-28 |  | 0d |  |  | 281.6h | 9,640 |
| 43 | 2.3.1 | **Write tests** |  | 3d | 2023-12-11 | 2023-12-14 |  | 0d |  |  | 129.6h | 3,240 |
| 44 | 2.5.1 | Write unit tests for server |  | 1d | 2023-12-11 | 2023-12-12 | 34 | 0d |  | QA Tester | 8h | 200 |
| 45 | 2.3.1.2 | Write unit tests for Medisail API interface |  | 1d | 2023-12-11 | 2023-12-12 | 44SS | 0d |  | QA Tester | 8h | 200 |
| 46 | 2.3.1.3 | Write unit tests for user API interface |  | 1d | 2023-12-11 | 2023-12-12 | 45SS | 0d |  | QA Tester | 8h | 200 |
| 47 | 2.3.1.4 | Write tests for customer user interface |  | 2d | 2023-12-11 | 2023-12-13 | 46SS | 0d |  | QA Tester | 16h | 400 |
| 48 | 2.3.1.5 | Write tests for supplier user interface |  | 2d | 2023-12-11 | 2023-12-13 | 47SS | 0d |  | QA Tester | 16h | 400 |
| 49 | 2.3.1.6 | Write tests for Medisail user interface |  | 2d | 2023-12-11 | 2023-12-13 | 48SS | 0d |  | QA Tester | 16h | 400 |
| 50 | 2.3.1.7 | Write tests for user login interface |  | 1.2d | 2023-12-11 | 2023-12-12 | 49SS | 0d |  | QA Tester | 9.6h | 240 |
| 51 | 2.3.1.8 | Write tests for marketplace interface |  | 3d | 2023-12-11 | 2023-12-14 | 50SS | 0d |  | QA Tester | 24h | 600 |
| 52 | 2.3.1.9 | Write tests for shopping cart interface |  | 1.5d | 2023-12-11 | 2023-12-12 | 51SS | 1.5d | 0d | QA Tester | 12h | 300 |
| 53 | 2.3.1.10 | Write tests for checkout interface |  | 1.5d | 2023-12-11 | 2023-12-12 | 52SS | 1.5d |  | QA Tester | 12h | 300 |
| 54 | 2.3.1.11 | Write unit/interface tests complete | milestone | 0d | 2023-12-14 | 2023-12-14 | 44, 45, 46, 47, 48, 49, 50, 51, 52, 53 | 0d |  |  |  |  |

| ID | WBS | Task | Type | Duration | Start | Finish | Predecessors | Total slack | Resources | Work | Cost |
| --- | --- | --- | --- | --- | --- | --- | --- | --- | --- | --- | --- |
| 55 | 2.3.2 | **Conduct tests** |  | 2d | 2023-12-14 | 2023-12-18 |  | 0d |  | 32h | 800 |
| 56 | 2.3.2.1 | Conduct back end unit tests |  | 2d | 2023-12-14 | 2023-12-18 | 54 | 0d | QA Tester | 16h | 400 |
| 57 | 2.3.2.2 | Conduct user interface tests |  | 2d | 2023-12-14 | 2023-12-18 | 56SS | 0d | QA Tester | 16h | 400 |
| 58 | 2.3.2.3 | Conduct tests complete | milestone | 0d | 2023-12-18 | 2023-12-18 | 57, 56 | 0d |  |  |  |
| 59 | 2.3.3 | Communicate results of unit tests with development team |  | 1d | 2023-12-18 | 2023-12-19 | 58 | 0d | QA Tester | 8h | 200 |
| 60 | 2.3.4 | Modify system based on test results (if needed) |  | 5d | 2023-12-19 | 2023-12-26 | 59 | 0d | Back End Developer; Front End Developer | 80h | 4,600 |
| 61 | 2.3.5 | **Retesting** |  | 2d | 2023-12-26 | 2023-12-28 |  | 0d |  | 32h | 800 |
| 62 | 2.3.5.1 | Retest user interfaces |  | 2d | 2023-12-26 | 2023-12-28 | 60 | 0d | QA Tester | 16h | 400 |
| 63 | 2.3.5.2 | Retest back end |  | 2d | 2023-12-26 | 2023-12-28 | 62SS | 0d | QA Tester | 16h | 400 |
| 64 | 2.3.5.3 | Retesting complete | milestone | 0d | 2023-12-28 | 2023-12-28 | 63, 62 | 0d |  |  |  |
| 65 | 2.6 | **Integration testing** |  | 17d | 2023-12-28 | 2024-01-22 |  | 0d |  | 328h | 14,088 |
| 66 | 2.4.1 | **Write integration tests** |  | 2d | 2023-12-28 | 2024-01-01 |  | 0d |  | 48h | 1,200 |
| 67 | 2.4.1.1 | Write integration tests: user interface / server |  | 2d | 2023-12-28 | 2024-01-01 | 64 | 0d | QA Tester | 16h | 400 |
| 68 | 2.4.1.2 | Write integration tests: server / database |  | 2d | 2023-12-28 | 2024-01-01 | 67SS | 0d | QA Tester | 16h | 400 |
| 69 | 2.4.1.3 | Write mocked integration tests: user interface / database |  | 2d | 2023-12-28 | 2024-01-01 | 68SS | 0d | QA Tester | 16h | 400 |
| 70 | 2.4.1.4 | Write integration tests complete | milestone | 0d | 2024-01-01 | 2024-01-01 | 69, 68, 67 | 0d |  |  |  |
| 71 | 2.4.2 | **Conduct integration tests** |  | 2d | 2024-01-01 | 2024-01-03 |  | 0d |  | 48h | 1,200 |
| 72 | 2.4.2.1 | Conduct integration tests: user interfaces / server |  | 2d | 2024-01-01 | 2024-01-03 | 70 | 0d | QA Tester | 16h | 400 |
| 73 | 2.4.2.2 | Conduct integration tests: server / database |  | 2d | 2024-01-01 | 2024-01-03 | 72SS | 0d | QA Tester | 16h | 400 |
| 74 | 2.4.2.3 | Conduct integration tests: user interfaces / database |  | 2d | 2024-01-01 | 2024-01-03 | 73SS | 0d | QA Tester | 16h | 400 |
| 75 | 2.4.2.4 | Conduct integration test complete | milestone | 0d | 2024-01-03 | 2024-01-03 | 74, 73, 72 | 0d |  |  |  |
| 76 | 2.4.3 | Communicate results of integration tests with development team |  | 1d | 2024-01-03 | 2024-01-04 | 75 | 0d | QA Tester; Senior Developer; Project Manager | 24h | 1,288 |
| 77 | 2.4.4 | Modify system based on test results (if needed) |  | 10d | 2024-01-04 | 2024-01-18 | 76 | 0d | Front End Developer; Back End Developer | 160h | 9,200 |
| 78 | 2.4.5 | **Retesting integration** |  | 2d | 2024-01-18 | 2024-01-22 |  | 0d |  | 48h | 1,200 |
| 79 | 2.4.5.1 | Retest integration: user interface / server |  | 2d | 2024-01-18 | 2024-01-22 | 77 | 0d | QA Tester | 16h | 400 |
| 80 | 2.4.5.2 | Retest integration: server / database |  | 2d | 2024-01-18 | 2024-01-22 | 79SS | 0d | QA Tester | 16h | 400 |
| 81 | 2.4.5.3 | Retest integration: user interface / database |  | 2d | 2024-01-18 | 2024-01-22 | 80SS | 0d | QA Tester | 16h | 400 |
| 82 | 2.4.5.4 | Retesting integration complete | milestone | 0d | 2024-01-22 | 2024-01-22 | 81, 80, 79 | 0d |  |  |  |

| ID | WBS | Task | Duration | Start | Finish | Predecessors | Total slack | Resources | Work | Cost |
| --- | --- | --- | --- | --- | --- | --- | --- | --- | --- | --- |
| 83 | 2.5 | **System testing** | 21d | 2024-01-22 | 2024-02-20 |  | 0d |  | 456h | 25,544 |
| 84 | 2.5.1 | Write system tests of the entire core system | 3d | 2024-01-22 | 2024-01-25 | 82 | 0d | QA Tester | 24h | 600 |
| 85 | 2.5.2 | Conduct system tests of the core system | 5d | 2024-01-25 | 2024-02-01 | 84 | 0d | QA Tester; Senior Developer; Project Manager | 120h | 6,440 |
| 86 | 2.5.3 | Communicate results of system tests with development teams | 1d | 2024-02-01 | 2024-02-02 | 85 | 0d | QA Tester; Senior Developer; Project Manager | 24h | 1,288 |
| 87 | 2.5.4 | Modify system based on test results | 10d | 2024-02-02 | 2024-02-16 | 86 | 0d | Front End Developer; Back End Developer; Senior Developer | 240h | 14,640 |
| 88 | 2.5.5 | Reconduct system tests | 2d | 2024-02-16 | 2024-02-20 | 87 | 0d | QA Tester; Senior Developer; Project Manager | 48h | 2,576 |
| 89 | 2.6 | Write documentation for core system | 2d | 2024-02-20 | 2024-02-22 | 88 | 0d |  |  |  |
| 90 | 2.7 | **Deploy release 1** | 18.8d | 2024-02-22 | 2024-03-20 |  | 0d |  |  |  |
| 91 | 2.7.1 | **Conduct required trainings** | 5d | 2024-02-22 | 2024-02-29 |  | 0d |  |  |  |
| 92 | 2.7.1.1 | Train sales manager on core e-procurement system | 5d | 2024-02-22 | 2024-02-29 | 89 | 0d |  |  |  |
| 93 | 2.7.1.2 | Train Medisail non-technical employees on core e-procurement system | 2d | 2024-02-22 | 2024-02-26 | 92SS | 0d |  |  |  |
| 94 | 2.7.2 | **Pre-Deployment marketing** | 3d | 2024-02-22 | 2024-02-27 |  | 0d |  |  |  |
| 95 | 2.7.2.1 | Create advertisement materials for core product | 2d | 2024-02-22 | 2024-02-26 | 93SS | 0d |  |  |  |
| 96 | 2.7.2.2 | Identify pilot customers | 3d | 2024-02-22 | 2024-02-27 | 95SS | 0d |  |  |  |
| 97 | 2.7.3 | **Product deployment** | 6d | 2024-02-27 | 2024-03-06 |  | 0d |  |  |  |
| 98 | 2.7.3.1 | Deploy core system | 1d | 2024-02-27 | 2024-02-28 | 96 | 0d |  |  |  |
| 99 | 2.7.3.2 | Monitor system performance after deployment | 5d | 2024-02-28 | 2024-03-06 | 98 | 0d |  |  |  |
| 100 | 2.7.4 | **Collect customer feedabck** | 9.8d | 2024-03-06 | 2024-03-20 |  | 0d |  |  |  |
| 101 | 2.7.4.1 | Create customer survey | 0.4d | 2024-03-06 | 2024-03-06 | 99 | 0d |  |  |  |
| 102 | 2.7.4.2 | Send customer survey to pilot customers and wait for responses | 7d | 2024-03-06 | 2024-03-15 | 101 | 0d |  |  |  |
| 103 | 2.7.4.3 | Collect and analyze customer feedback | 2d | 2024-03-15 | 2024-03-19 | 102 | 0d |  |  |  |
| 104 | 2.7.4.4 | Share customer feedback with team | 0.4d | 2024-03-19 | 2024-03-20 | 103 | 0d |  |  |  |
| 105 | 3 | **Phase 2: Integrated System Release** | 78d | 2024-03-20 | 2024-07-08 |  | 0d |  |  |  |
| 106 | 3.1 | **Adjust Plan Based on Customer Feedback** | 2d | 2024-03-20 | 2024-03-22 |  | 0d |  |  |  |
| 107 | 3.1.1 | Determine which parts of the feedback are relevant | 1d | 2024-03-20 | 2024-03-21 | 104 | 0d |  |  |  |
| 108 | 3.1.2 | Revise Release 2 requirements based on feedback assessment | 1d | 2024-03-21 | 2024-03-22 | 107 | 0d |  |  |  |

| ID | WBS | Task | Type | Duration | Start | Finish | Predecessors | Total slack | Free slack |
| --- | --- | --- | --- | --- | --- | --- | --- | --- | --- |
| 109 | 3.2 | **Modify Database Functionality** |  | 5d | 2024-03-22 | 2024-03-29 |  | 0d |  |
| 110 | 3.2.1 | **Make Static Tables Dynamic** |  | 3d | 2024-03-22 | 2024-03-27 |  | 0d |  |
| 111 | 3.2.1.1 | Update endpoints in server to allow for database updates |  | 2d | 2024-03-22 | 2024-03-26 | 108 | 0d |  |
| 112 | 3.2.1.2 | Test mock updates in database |  | 1d | 2024-03-26 | 2024-03-27 | 111 | 0d |  |
| 113 | 3.2.2 | **Create/Fill Statistics Tables** |  | 1d | 2024-03-27 | 2024-03-28 |  | 0d |  |
| 114 | 3.2.2.1 | Fill Customer Statistics table with data in fields: Customer ID (Integer), Customer Name (String), Subscription Tier (Integer), Orders per Month (Integer), Average Order Total (float), Monthly Average Order Total (float), Most Purchased Product (String) |  | 1d | 2024-03-27 | 2024-03-28 | 112 | 0d |  |
| 115 | 3.2.2.2 | Fill Supplier Statistics table with data in fields: Supplier ID (Integer), Supplier Name (String), Products Purchased per Month (Integer), Most Purchased Product (String), Average Sales per Month (Integer) |  | 1d | 2024-03-27 | 2024-03-28 | 114SS | 0d |  |
| 116 | 3.2.2.3 | Fill statistics tables with fields complete | milestone | 0d | 2024-03-28 | 2024-03-28 | 114, 115 | 0d |  |
| 117 | 3.2.3 | Write SQL script to designate primary and foreign keys of new tables in the database |  | 1d | 2024-03-28 | 2024-03-29 | 116 | 0d |  |
| 118 | 3.3 | **Update Server and API Interfaces** |  | 8d | 2024-03-29 | 2024-04-10 |  | 0d |  |
| 119 | 3.3.1 | **Create endpoints** |  | 1d | 2024-03-29 | 2024-04-01 |  | 0d |  |
| 120 | 3.3.1.1 | Create endpoints in server to allow for modification of new database tables |  | 1d | 2024-03-29 | 2024-04-01 | 117 | 0d |  |
| 121 | 3.3.1.2 | Create endpoints in user API interface that allow suppliers to post and remove products from marketplace |  | 1d | 2024-03-29 | 2024-04-01 | 120SS | 0d |  |
| 122 | 3.3.1.3 | Create GET endpoints in Medisail API interface to access customer and supplier statistics data |  | 1d | 2024-03-29 | 2024-04-01 | 121SS | 0d |  |
| 123 | 3.3.1.4 | Create endpoints complete | milestone | 0d | 2024-04-01 | 2024-04-01 | 120, 121, 122 | 0d |  |
| 124 | 3.3.2 | Test endpoints in Postman |  | 2d | 2024-04-01 | 2024-04-03 | 123 | 0d |  |
| 125 | 3.3.3 | Develop functionality for statistics charting in Medisail API interface |  | 5d | 2024-04-03 | 2024-04-10 | 124 | 0d |  |
| 126 | 3.4 | **Update User Interfaces** |  | 6d | 2024-04-10 | 2024-04-18 |  | 0d |  |
| 127 | 3.4.1 | **Supplier User Interface** |  | 4d | 2024-04-10 | 2024-04-16 |  | 165d |  |
| 128 | 3.4.1.1 | Develop UI components that allow suppliers to post new products to the marketplace |  | 3d | 2024-04-10 | 2024-04-15 | 125 | 165d | 0d |
| 129 | 3.4.1.2 | Test user interface to ensure that components correctly map to API endpoints |  | 1d | 2024-04-15 | 2024-04-16 | 128 | 165d |  |
| 130 | 3.4.2 | **Medisail User Interface** |  | 6d | 2024-04-10 | 2024-04-18 |  | 0d |  |
| 131 | 3.4.2.1 | Develop UI components that allow Medisail employees to view analytics data rendered from API endpoints connected to new database tables |  | 4d | 2024-04-10 | 2024-04-16 | 125 | 0d |  |
| 132 | 3.4.2.2 | Test user interface to ensure that components correct map to API endpoints |  | 2d | 2024-04-16 | 2024-04-18 | 131 | 0d |  |

| ID | WBS | Task | Type | Duration | Start | Finish | Predecessors | Total slack | Free slack |
| --- | --- | --- | --- | --- | --- | --- | --- | --- | --- |
| 133 | 3.5 | **Test Integrated System** |  | 44d | 2024-04-18 | 2024-06-19 |  | 0d |  |
| 134 | 3.5.1 | **Unit Testing** |  | 13d | 2024-04-18 | 2024-05-07 |  | 0d |  |
| 135 | 3.5.1.1 | **Write unit/interface tests** |  | 2d | 2024-04-18 | 2024-04-22 |  | 0d |  |
| 136 | 3.5.1.1.1 | Write unit tests for new server functionality |  | 1d | 2024-04-18 | 2024-04-19 | 132 | 0d |  |
| 137 | 3.5.1.1.2 | Write unit tests for new Medisail API interface endpoints |  | 1d | 2024-04-18 | 2024-04-19 | 136SS | 0d |  |
| 138 | 3.5.1.1.3 | Write unit tests for user API interface that ensure that customers don't have access to posting new products |  | 1d | 2024-04-18 | 2024-04-19 | 137SS | 0d |  |
| 139 | 3.5.1.1.4 | Write tests for customer user interface |  | 1d | 2024-04-18 | 2024-04-19 | 138SS | 0d |  |
| 140 | 3.5.1.1.5 | Write tests for supplier user interface marketplace product posting rendering capabilities |  | 1d | 2024-04-18 | 2024-04-19 | 139SS | 0d |  |
| 141 | 3.5.1.1.6 | Write tests for Medisail user interface data analytics rendering capabilities |  | 2d | 2024-04-18 | 2024-04-22 | 140SS | 0d |  |
| 142 | 3.5.1.1.7 | Write tests for marketplace interface to ensure that new product postings are correctly rendered |  | 1d | 2024-04-18 | 2024-04-19 | 141SS | 1d | 0d |
| 143 | 3.5.1.1.8 | Write tests for shopping cart interface |  | 1d | 2024-04-18 | 2024-04-19 | 142SS | 1d |  |
| 144 | 3.5.1.1.9 | Write unit/interface tests complete | milestone | 0d | 2024-04-22 | 2024-04-22 | 143, 142, 140, 139, 138, 137, 136, 141 | 0d |  |
| 145 | 3.5.1.2 | **Conduct unit/interface tests** |  | 2d | 2024-04-22 | 2024-04-24 |  | 0d |  |
| 146 | 3.5.1.2.1 | Conduct back end unit tests |  | 2d | 2024-04-22 | 2024-04-24 | 144 | 0d |  |
| 147 | 3.5.1.2.2 | Conduct user interface tests |  | 2d | 2024-04-22 | 2024-04-24 | 146SS | 0d |  |
| 148 | 3.5.1.3 | Communicate results of unit tests with development team |  | 2d | 2024-04-24 | 2024-04-26 | 147 | 0d |  |
| 149 | 3.5.1.4 | Modify system based on test results (if needed) |  | 5d | 2024-04-26 | 2024-05-03 | 148 | 0d |  |
| 150 | 3.5.1.5 | **Retesting unit/interface** |  | 2d | 2024-05-03 | 2024-05-07 |  | 0d |  |
| 151 | 3.5.1.5.1 | Retest user interfaces |  | 2d | 2024-05-03 | 2024-05-07 | 149 | 0d |  |
| 152 | 3.5.1.5.2 | Reteset back end |  | 2d | 2024-05-03 | 2024-05-07 | 151SS | 0d |  |
| 153 | 3.5.2 | **Integration Testing** |  | 14d | 2024-05-07 | 2024-05-27 |  | 0d |  |
| 154 | 3.5.2.1 | **Write integration tests** |  | 2d | 2024-05-07 | 2024-05-09 |  | 0d |  |
| 155 | 3.5.2.1.1 | Write integration tests between supplier user interface and server |  | 2d | 2024-05-07 | 2024-05-09 | 152 | 0d |  |
| 156 | 3.5.2.1.2 | Write integration tests between Medisail user interface and server |  | 2d | 2024-05-07 | 2024-05-09 | 155SS | 0d |  |
| 157 | 3.5.2.1.3 | Write integration tests between marketplace user interface and server |  | 1d | 2024-05-07 | 2024-05-08 | 156SS | 0d |  |
| 158 | 3.5.2.1.4 | Write integration tests between user API interface and database |  | 2d | 2024-05-07 | 2024-05-09 | 157SS | 0d |  |
| 159 | 3.5.2.1.5 | Write integration tests between Medisail API interface and database |  | 2d | 2024-05-07 | 2024-05-09 | 158SS | 0d |  |
| 160 | 3.5.2.1.6 | Write mocked integration tests between user interfaces and database |  | 0.5d | 2024-05-07 | 2024-05-07 | 159SS | 1.5d |  |
| 161 | 3.5.2.1.7 | Write integration tests complete | milestone | 0d | 2024-05-09 | 2024-05-09 | 155, 156, 157, 158, 159, 160 | 0d |  |

| ID | WBS | Task | Type | Duration | Start | Finish | Predecessors | Total slack |
| --- | --- | --- | --- | --- | --- | --- | --- | --- |
| 162 | 3.5.2.2 | **Conduct integration tests** |  | 2d | 2024-05-09 | 2024-05-13 |  | 0d |
| 163 | 3.5.2.2.1 | Conduct integration tests between user interfaces and server |  | 2d | 2024-05-09 | 2024-05-13 | 161 | 0d |
| 164 | 3.5.2.2.2 | Conduct integration tests between server and database |  | 2d | 2024-05-09 | 2024-05-13 | 163SS | 0d |
| 165 | 3.5.2.2.3 | Conduct integration tests between user interfaces and database |  | 2d | 2024-05-09 | 2024-05-13 | 164SS | 0d |
| 166 | 3.5.2.2.4 | Conduct integration tests complete | milestone | 0d | 2024-05-13 | 2024-05-13 | 163, 164, 165 | 0d |
| 167 | 3.5.2.3 | Communicate results of integration tests with development team |  | 1d | 2024-05-13 | 2024-05-14 | 166 | 0d |
| 168 | 3.5.2.4 | Modify system based on test results (if needed) |  | 7d | 2024-05-14 | 2024-05-23 | 167 | 0d |
| 169 | 3.5.2.5 | **Retesting integration** |  | 2d | 2024-05-23 | 2024-05-27 |  | 0d |
| 170 | 3.5.2.5.1 | Retest integration between user interface and server |  | 2d | 2024-05-23 | 2024-05-27 | 168 | 0d |
| 171 | 3.5.2.5.2 | Retest integration between server and database |  | 2d | 2024-05-23 | 2024-05-27 | 170SS | 0d |
| 172 | 3.5.2.5.3 | Retest integration between user interface and database |  | 2d | 2024-05-23 | 2024-05-27 | 171SS | 0d |
| 173 | 3.5.2.5.4 | Retest integration complete | milestone | 0d | 2024-05-27 | 2024-05-27 | 172, 171, 170 | 0d |
| 174 | 3.5.3 | **System Testing** |  | 17d | 2024-05-27 | 2024-06-19 |  | 0d |
| 175 | 3.5.3.1 | Write system tests of the entire integrated system |  | 3d | 2024-05-27 | 2024-05-30 | 173 | 0d |
| 176 | 3.5.3.2 | Conduct system tests of the integrated system |  | 3d | 2024-05-30 | 2024-06-04 | 175 | 0d |
| 177 | 3.5.3.3 | Communicate results of system tests with development teams |  | 1d | 2024-06-04 | 2024-06-05 | 176 | 0d |
| 178 | 3.5.3.4 | Modify system based on test results (if needed) |  | 7d | 2024-06-05 | 2024-06-14 | 177 | 0d |
| 179 | 3.5.3.5 | Reconduct system tests |  | 3d | 2024-06-14 | 2024-06-19 | 178 | 0d |
| 180 | 3.6 | Write documentation for integrated system |  | 3d | 2024-06-19 | 2024-06-24 | 179 | 0d |
| 181 | 3.7 | **Deploy Release 2** |  | 10d | 2024-06-24 | 2024-07-08 |  | 0d |
| 182 | 3.7.1 | **Conduct Required Trainings** |  | 3d | 2024-06-24 | 2024-06-27 |  | 0d |
| 183 | 3.7.1.1 | Update sales manager on new capabilities of integrated e-procurement system |  | 2d | 2024-06-24 | 2024-06-26 | 180 | 0d |
| 184 | 3.7.1.2 | Train Medisail non-technical employees on integrated e-procurement system analytics capabilities |  | 3d | 2024-06-24 | 2024-06-27 | 183SS | 0d |
| 185 | 3.7.2 | **Pre-Deployment Marketing** |  | 1d | 2024-06-24 | 2024-06-25 |  | 0d |
| 186 | 3.7.2.1 | Create advertisement materials for integrated product |  | 1d | 2024-06-24 | 2024-06-25 | 184SS | 0d |

| ID | WBS | Task | Type | Duration | Start | Finish | Predecessors | Total slack | Free slack |
| --- | --- | --- | --- | --- | --- | --- | --- | --- | --- |
| 187 | 3.7.3 | **Product Deployment** |  | 6d | 2024-06-24 | 2024-07-02 |  | 0d |  |
| 188 | 3.7.3.1 | Deploy integrated system |  | 1d | 2024-06-24 | 2024-06-25 | 186SS | 0d |  |
| 189 | 3.7.3.2 | Monitor system performance after deployment |  | 5d | 2024-06-25 | 2024-07-02 | 188 | 110d |  |
| 190 | 3.7.4 | **Collect Supplier Feedback on Analytics Capabilities** |  | 10d | 2024-06-24 | 2024-07-08 |  | 0d |  |
| 191 | 3.7.4.1 | Create Medisail non-technical employee survey about new analytics capabilities |  | 0.5d | 2024-06-24 | 2024-06-24 | 188SS | 0d |  |
| 192 | 3.7.4.2 | Send survey to Medisail non-technical employees who use the system and wait for results |  | 7d | 2024-06-24 | 2024-07-03 | 191 | 0d |  |
| 193 | 3.7.4.3 | Collect and analyze supplier feedback |  | 2d | 2024-07-03 | 2024-07-05 | 192 | 0d |  |
| 194 | 3.7.4.4 | Share survey feedback with team |  | 0.5d | 2024-07-05 | 2024-07-08 | 193 | 0d |  |
| 195 | 4 | **Phase 3: Advanced System Release** |  | 282.3d | 2023-10-23 | 2024-11-20 |  | 9d |  |
| 196 | 4.1 | **Adjust Plan Based on Supplier Feedback** |  | 2d | 2024-07-08 | 2024-07-10 |  | 0d |  |
| 197 | 4.1.1 | Determine which aspects of feedback are relevant |  | 1d | 2024-07-08 | 2024-07-09 | 194 | 0d |  |
| 198 | 4.1.2 | Revise Release 3 requirements based on feedback assessment |  | 1d | 2024-07-09 | 2024-07-10 | 197 | 0d |  |
| 199 | 4.2 | **Update Backend for Advanced Analytics** |  | 14d | 2024-07-10 | 2024-07-30 |  | 0d |  |
| 200 | 4.2.1 | **User API Interface** |  | 6d | 2024-07-10 | 2024-07-18 |  | 0d |  |
| 201 | 4.2.1.1 | Write SQL queries to query analytics data from database for suppliers |  | 2d | 2024-07-10 | 2024-07-12 | 198 | 0d |  |
| 202 | 4.2.1.2 | Write SQL queries to query analytics data from database for customers |  | 2d | 2024-07-10 | 2024-07-12 | 201SS | 0d |  |
| 203 | 4.2.1.3 | **Create endpoints** |  | 1d | 2024-07-12 | 2024-07-15 |  | 0d |  |
| 204 | 4.2.1.3.1 | Create endpoints for analytics data for supplier UI |  | 1d | 2024-07-12 | 2024-07-15 | 202 | 0d |  |
| 205 | 4.2.1.3.2 | Create endpoints for analytics data for user UI |  | 1d | 2024-07-12 | 2024-07-15 | 204SS | 0d |  |
| 206 | 4.2.1.4 | Test endpoints to ensure that supplier and user analytics data is mapped correctly |  | 3d | 2024-07-15 | 2024-07-18 | 205 | 0d |  |
| 207 | 4.2.2 | **Tableau Functionality** |  | 8d | 2024-07-18 | 2024-07-30 |  | 0d |  |
| 208 | 4.2.2.1 | Negotiate and obtain Tableau licence |  | 5d | 2024-07-18 | 2024-07-25 | 206 | 0d |  |
| 209 | 4.2.2.2 | Review Tableau documentation |  | 3d | 2024-07-18 | 2024-07-23 | 208SS | 1d | 0d |
| 210 | 4.2.2.3 | Refine database tables as needed per Tableau documentation |  | 4d | 2024-07-18 | 2024-07-24 | 209SS | 1d | 0d |
| 211 | 4.2.2.4 | Create Tableau-specific API endpoints for suppliers |  | 2d | 2024-07-18 | 2024-07-22 | 210SS | 3d | 0d |
| 212 | 4.2.2.5 | Create Tableau-specific API endpoints for customers |  | 2d | 2024-07-18 | 2024-07-22 | 211SS | 3d | 0d |
| 213 | 4.2.2.6 | Create Tableau-specific API endpoints for Medisail non-technical employees |  | 2d | 2024-07-18 | 2024-07-22 | 212SS | 3d |  |
| 214 | 4.2.2.7 | Tableau functionality complete | milestone | 0d | 2024-07-25 | 2024-07-25 | 208, 209, 210, 211, 212, 213 | 0d |  |
| 215 | 4.2.2.8 | Test all Tableau endpoints |  | 3d | 2024-07-25 | 2024-07-30 | 214 | 0d |  |

| ID | WBS | Task | Type | Duration | Start | Finish | Predecessors | Total slack | Free slack |
| --- | --- | --- | --- | --- | --- | --- | --- | --- | --- |
| 216 | 4.3 | **Update Frontend for Advanced Analytics** |  | 206.3d | 2023-10-23 | 2024-08-06 |  | 85d |  |
| 217 | 4.3.1 | Create UI components in customer user interface to render analytics data from database |  | 5d | 2024-07-30 | 2024-08-06 | 215 | 0d |  |
| 218 | 4.3.2 | Create UI components in customer user interface to render Tableau graphics and charts |  | 3d | 2024-07-30 | 2024-08-02 | 217SS | 0d |  |
| 219 | 4.3.3 | Create UI components in supplier user interface to render analytics data from database |  | 5d | 2024-07-30 | 2024-08-06 | 218SS | 0d |  |
| 220 | 4.3.4 | Create UI components in supplier user interface to render Tableau graphics and charts |  | 3d | 2024-07-30 | 2024-08-02 | 219SS | 2d | 0d |
| 221 | 4.3.5 | Create UI components in Medisail user interface to render Tableau graphics and charts |  | 3d | 2024-07-30 | 2024-08-02 | 220SS | 2d |  |
| 222 | 4.3.6 | Create UI components complete | milestone | 0d | 2024-08-06 | 2024-08-06 | 217, 218, 219, 220, 221 | 0d |  |
| 223 | 4.3.7 | Test database analytics rendering in customer and supplier user interfaces |  | 2d | 2023-10-23 | 2023-10-24 |  | 290.3d |  |
| 224 | 4.3.8 | Test Tableau integration in all user interfaces |  | 3d | 2023-10-23 | 2023-10-25 |  | 289.3d |  |
| 225 | 4.4 | **Test Advanced System** |  | 53d | 2024-08-06 | 2024-10-18 |  | 0d |  |
| 226 | 4.4.1 | **Unit Testing** |  | 18d | 2024-08-06 | 2024-08-30 |  | 0d |  |
| 227 | 4.4.1.1 | **Write unit/interface/Tableau tests** |  | 3d | 2024-08-06 | 2024-08-09 |  | 0d |  |
| 228 | 4.4.1.1.1 | Write unit tests for data analytics API endpoints to ensure that only applicable data is accessible |  | 2d | 2024-08-06 | 2024-08-08 | 222 | 0d |  |
| 229 | 4.4.1.1.2 | Write unit tests for Tableau API endpoints |  | 2d | 2024-08-06 | 2024-08-08 | 228SS | 0d |  |
| 230 | 4.4.1.1.3 | Write unit tests for new Medisail API interface endpoints to ensure that all data analytics is accessable |  | 2d | 2024-08-06 | 2024-08-08 | 229SS | 0d |  |
| 231 | 4.4.1.1.4 | Write tests for customer user interface data analytics capabilities |  | 1d | 2024-08-06 | 2024-08-07 | 230SS | 0d |  |
| 232 | 4.4.1.1.5 | Write tests for supplier user interface data analytics capabilities |  | 1d | 2024-08-06 | 2024-08-07 | 231SS | 0d |  |
| 233 | 4.4.1.1.6 | Write tests for Medisail user interface data analytics rendering capabilities |  | 2d | 2024-08-06 | 2024-08-08 | 232SS | 0d |  |
| 234 | 4.4.1.1.7 | Write tests for Tableau integration in customer user interface |  | 2d | 2024-08-06 | 2024-08-08 | 233SS | 0d |  |
| 235 | 4.4.1.1.8 | Write tests for Tableau integration in supplier user interface |  | 2d | 2024-08-06 | 2024-08-08 | 234SS | 0d |  |
| 236 | 4.4.1.1.9 | Write tests for Tableau integration in Medisail user interface |  | 3d | 2024-08-06 | 2024-08-09 | 235SS | 0d |  |
| 237 | 4.4.1.1.10 | Write unit/interface/Tableau tests complete | milestone | 0d | 2024-08-09 | 2024-08-09 | 236, 235, 234, 233, 232, 231, 230, 229, 228 | 0d |  |
| 238 | 4.4.1.2 | **Conduct unit/interface tests** |  | 5d | 2024-08-09 | 2024-08-16 |  | 0d |  |
| 239 | 4.4.1.2.1 | Conduct back end unit tests |  | 5d | 2024-08-09 | 2024-08-16 | 237 | 0d |  |
| 240 | 4.4.1.2.2 | Conduct user interface tests |  | 4d | 2024-08-09 | 2024-08-15 | 239SS | 1d |  |
| 241 | 4.4.1.2.3 | Conduct tests complete | milestone | 0d | 2024-08-16 | 2024-08-16 | 239, 240 | 0d |  |
| 242 | 4.4.1.3 | Communicate results of unit tests with development team |  | 1d | 2024-08-16 | 2024-08-19 | 241 | 0d |  |
| 243 | 4.4.1.4 | Modify system based on test results (if needed) |  | 5d | 2024-08-19 | 2024-08-26 | 242 | 0d |  |
| 244 | 4.4.1.5 | Retest user interfaces |  | 2d | 2024-08-26 | 2024-08-28 | 243 | 0d |  |
| 245 | 4.4.1.6 | Reteset back end |  | 2d | 2024-08-28 | 2024-08-30 | 244 | 0d |  |

| ID | WBS | Task | Type | Duration | Start | Finish | Predecessors | Total slack | Free slack |
| --- | --- | --- | --- | --- | --- | --- | --- | --- | --- |
| 246 | 4.4.2 | **Integration Testing** |  | 14d | 2024-08-30 | 2024-09-19 |  | 0d |  |
| 247 | 4.4.2.1 | **Write integration tests** |  | 3d | 2024-08-30 | 2024-09-04 |  | 0d |  |
| 248 | 4.4.2.1.1 | Write integration tests between supplier user interface and server |  | 2d | 2024-08-30 | 2024-09-03 | 245 | 0d |  |
| 249 | 4.4.2.1.2 | Write integration tests between Medisail user interface and server |  | 2d | 2024-08-30 | 2024-09-03 | 248SS | 0d |  |
| 250 | 4.4.2.1.3 | Write integration tests between marketplace user interface and server |  | 2d | 2024-08-30 | 2024-09-03 | 249SS | 0d |  |
| 251 | 4.4.2.1.4 | Write integration tests between user API interface and database |  | 3d | 2024-08-30 | 2024-09-04 | 250SS | 0d |  |
| 252 | 4.4.2.1.5 | Write integration tests between Medisail API interface and database |  | 3d | 2024-08-30 | 2024-09-04 | 251SS | 1d | 0d |
| 253 | 4.4.2.1.6 | Write mocked integration tests between user interfaces and database |  | 2d | 2024-08-30 | 2024-09-03 | 252SS | 1d |  |
| 254 | 4.4.2.1.7 | Write integration tests complete | milestone | 0d | 2024-09-04 | 2024-09-04 | 248, 249, 250, 251, 253 | 0d |  |
| 255 | 4.4.2.2 | **Conduct integration tests** |  | 1d | 2024-09-04 | 2024-09-05 |  | 0d |  |
| 256 | 4.4.2.2.1 | Conduct integration tests between user interfaces and server |  | 1d | 2024-09-04 | 2024-09-05 | 254 | 0d |  |
| 257 | 4.4.2.2.2 | Conduct integration tests between server and database |  | 1d | 2024-09-04 | 2024-09-05 | 256SS | 0d |  |
| 258 | 4.4.2.2.3 | Conduct integration tests between user interfaces and database |  | 1d | 2024-09-04 | 2024-09-05 | 257SS | 0d |  |
| 259 | 4.4.2.2.4 | Conduct integration tests complete | milestone | 0d | 2024-09-05 | 2024-09-05 | 256, 257, 258 | 0d |  |
| 260 | 4.4.2.3 | Communicate results of integration tests with development team |  | 1d | 2024-09-05 | 2024-09-06 | 259 | 0d |  |
| 261 | 4.4.2.4 | Modify system based on test results (if needed) |  | 7d | 2024-09-06 | 2024-09-17 | 260 | 0d |  |
| 262 | 4.4.2.5 | **Retest integration** |  | 2d | 2024-09-17 | 2024-09-19 |  | 0d |  |
| 263 | 4.4.2.5.1 | Retest integration between user interface and server |  | 2d | 2024-09-17 | 2024-09-19 | 261 | 0d |  |
| 264 | 4.4.2.5.2 | Retest integration between server and database |  | 2d | 2024-09-17 | 2024-09-19 | 263SS | 0d |  |
| 265 | 4.4.2.5.3 | Retest integration between user interface and database |  | 2d | 2024-09-17 | 2024-09-19 | 264SS | 0d |  |
| 266 | 4.4.2.5.4 | Retest integration complete | milestone | 0d | 2024-09-19 | 2024-09-19 | 265, 264, 263 | 0d |  |
| 267 | 4.4.3 | **System Testing** |  | 21d | 2024-09-19 | 2024-10-18 |  | 0d |  |
| 268 | 4.4.3.1 | Write system tests of the entire advanced system |  | 3d | 2024-09-19 | 2024-09-24 | 266 | 0d |  |
| 269 | 4.4.3.2 | Conduct system tests of the advanced system |  | 2d | 2024-09-24 | 2024-09-26 | 268 | 0d |  |
| 270 | 4.4.3.3 | Communicate results of system tests with development teams |  | 2d | 2024-09-26 | 2024-09-30 | 269 | 0d |  |
| 271 | 4.4.3.4 | Modify system based on test results (if needed) |  | 10d | 2024-09-30 | 2024-10-14 | 270 | 0d |  |
| 272 | 4.4.3.5 | Reconduct system tests |  | 4d | 2024-10-14 | 2024-10-18 | 271 | 0d |  |
| 273 | 4.5 | Write documentation for advanced system |  | 5d | 2024-10-18 | 2024-10-25 | 272 | 0d |  |

| ID | WBS | Task | Duration | Start | Finish | Predecessors | Total slack | Free slack |
| --- | --- | --- | --- | --- | --- | --- | --- | --- |
| 274 | 4.6 | **Deploy Release 3** | 18d | 2024-10-25 | 2024-11-20 |  | 0d |  |
| 275 | 4.6.1 | **Conduct Required Trainings** | 9d | 2024-10-25 | 2024-11-07 |  | 0d |  |
| 276 | 4.6.1.1 | Update sales manager on new capabilities of advanced e-procurement system | 3d | 2024-10-25 | 2024-10-30 | 273 | 0d |  |
| 277 | 4.6.1.2 | Train Medisail non-technical employees on new analytics capabilities | 2d | 2024-10-30 | 2024-11-01 | 276 | 18d | 0d |
| 278 | 4.6.1.3 | Train customers on new analytics capabilities | 2d | 2024-11-01 | 2024-11-05 | 277 | 18d | 0d |
| 279 | 4.6.1.4 | Train suppliers on new analytics capabilities | 2d | 2024-11-05 | 2024-11-07 | 278 | 18d |  |
| 280 | 4.6.2 | **Pre-Deployment Marketing** | 12d | 2024-10-25 | 2024-11-12 |  | 0d |  |
| 281 | 4.6.2.1 | Create advertisement materials for advanced product | 1d | 2024-10-25 | 2024-10-28 | 276SS | 0d |  |
| 282 | 4.6.2.2 | Conduct sales calls with potential new suppliers | 1d | 2024-10-28 | 2024-10-29 | 281 | 0d |  |
| 283 | 4.6.2.3 | Conduct sales calls with potential new customers | 10d | 2024-10-29 | 2024-11-12 | 282 | 0d |  |
| 284 | 4.6.3 | **Product Deployment** | 6d | 2024-11-12 | 2024-11-20 |  | 0d |  |
| 285 | 4.6.3.1 | Deploy advanced system | 1d | 2024-11-12 | 2024-11-13 | 283 | 0d |  |
| 286 | 4.6.3.2 | Monitor system performance after deployment | 5d | 2024-11-13 | 2024-11-20 | 285 | 0d |  |
| 287 | 5 | **End of Project Activities** | 15d | 2024-11-12 | 2024-12-03 |  | 0d |  |
| 288 | 5.1 | **Product Adoption** | 15d | 2024-11-12 | 2024-12-03 |  | 0d |  |
| 289 | 5.1.1 | Plan product education workshops for customers and suppliers | 2d | 2024-11-20 | 2024-11-22 | 286 | 0d |  |
| 290 | 5.1.2 | Schedule product education workshops | 1d | 2024-11-22 | 2024-11-25 | 289 | 0d |  |
| 291 | 5.1.3 | Conduct product education workshops | 5d | 2024-11-25 | 2024-12-02 | 290 | 0d |  |
| 292 | 5.1.4 | Gather feedback from customers and suppliers during workshops | 1d | 2024-12-02 | 2024-12-03 | 291 | 0d |  |
| 293 | 5.1.5 | Train Medisail sales teams and customer support on product | 2d | 2024-11-12 | 2024-11-14 | 285SS | 5d | 0d |
| 294 | 5.2 | **Continuous Improvement** | 10d | 2024-11-12 | 2024-11-26 |  | 5d |  |
| 295 | 5.2.1 | Send monthly surveys to customers and suppliers | 1d | 2024-11-12 | 2024-11-13 | 293SS | 5d | 0d |
| 296 | 5.2.2 | Gather feedback from surveys | 1d | 2024-11-13 | 2024-11-14 | 295 | 5d | 0d |
| 297 | 5.2.3 | Discuss results of surveys | 1d | 2024-11-14 | 2024-11-15 | 296 | 5d | 0d |
| 298 | 5.2.4 | Determine feasibility of improvements suggested in survey results | 2d | 2024-11-15 | 2024-11-19 | 297 | 5d | 0d |
| 299 | 5.2.5 | Implement accepted improvements to software system | 5d | 2024-11-19 | 2024-11-26 | 298 | 5d |  |
